# CGEMS

How a schedule from MS Project changed from version to version. A marks actual dates.

## Version 1 (saved 2006-07-10)

Note of the change: initial revision

| ID | WBS | Task | Duration | Start | Finish | Predecessors | Complete | Total float | Constraint |
| --- | --- | --- | --- | --- | --- | --- | --- | --- | --- |
| 1 | 1 | **CGEMS 1.0 Release** | 119d | 2006-04-04 A | 2006-09-15 |  | 3% | 0d |  |
| 2 | 1.1 | **Project Management and Control** | 80d | 2006-05-29 | 2006-09-15 |  |  | 0d |  |
| 3 |  | Project Management | 80d | 2006-05-29 | 2006-09-15 |  |  | 0d | must finish on 2006-09-15 |
| 4 |  | Project Control | 80d | 2006-05-29 | 2006-09-15 |  |  | 0d | finish no earlier than 2006-09-15 |
| 5 | 1.2 | **Inception Phase** | 56d | 2006-04-04 A | 2006-06-20 |  | 3% | 63d |  |
| 6 | 1.2.1 | **Requirements Gathering** | 51d | 2006-04-04 | 2006-06-13 |  |  | 58.75d |  |
| 7 |  | NCICB/CGEMS team | 8w | 2006-04-04 | 2006-05-29 |  |  | 68.75d | start no earlier than 2006-04-04 |
| 8 |  | Determine Basic Use Cases | 8w | 2006-04-04 | 2006-05-29 |  |  | 68.75d | start no earlier than 2006-04-04 |
| 9 |  | Prioritize Use Cases | 1d | 2006-06-13 | 2006-06-13 | 7, 8 |  | 58.75d | start no earlier than 2006-06-13 |
| 10 | 1.2.2 | **Documentation** | 12d | 2006-06-05 A | 2006-06-20 |  | 13% | 63d |  |
| 11 |  | Draft Project Plan | 5d | 2006-06-05 | 2006-06-09 |  |  | 70d | start no earlier than 2006-06-05 |
| 12 |  | Draft Requirements Specification Document | 5d | 2006-06-14 A | 2006-06-20 | 9 | 75% | 55d |  |
| 13 |  | Draft Test Plan | 10d | 2006-06-05 | 2006-06-16 |  |  | 65d |  |
| 14 |  | Draft Test Cases | 10d | 2006-06-05 | 2006-06-16 |  |  | 65d |  |
| 15 |  | Milestone: General Requirements Captured & Priortized | 0d | 2006-06-20 | 2006-06-20 | 12 |  | 63d |  |
| 16 | 1.3 | **Elaboration Phase** | 34d | 2006-06-12 A | 2006-07-27 |  | 42% | 36d |  |
| 17 | 1.3.1 | **Architecture** | 8d | 2006-06-21 | 2006-06-30 |  |  | 55d |  |
| 18 |  | Initial Draft of Architecture | 1w | 2006-06-21 | 2006-06-27 | 12 |  | 55d |  |
| 19 |  | Internal review with caIntegrator Team | 0d | 2006-06-27 | 2006-06-27 | 18 |  | 55d |  |
| 20 |  | Incorporate Comments/Feedback from the team review | 1d | 2006-06-28 | 2006-06-28 | 19 |  | 55d |  |
| 21 |  | Review architecture with the "Review Board" | 0d | 2006-06-28 | 2006-06-28 | 20 |  | 55d | start no earlier than 2005-06-01 |
| 22 |  | Draft design document (caBIG template) | 0.4w | 2006-06-29 | 2006-06-30 | 21 |  | 55d |  |
| 23 |  | Milestone: Completed Design document | 0d | 2006-06-30 | 2006-06-30 | 22 |  | 55d |  |
| 24 | 1.3.2 | **Itreration 1: Generate caCORE-SDK API** | 25d | 2006-06-12 A | 2006-07-14 |  | 90% | 19d |  |
| 25 |  | Harmonize CGEMS UML model with caIntegrator | 7d | 2006-06-12 A | 2006-06-20 |  | 90% | 0d | finish no earlier than 2006-06-20 |
| 26 |  | Harmozine CGEMS OM with CG-OM | 7d | 2006-06-12 A | 2006-06-21 | 25 | 90% | 36.3d | start no earlier than 2006-06-12 |
| 27 |  | MileStone: Finalize model with CGEMS stake holders | 0d | 2006-06-22 | 2006-06-22 |  |  | 0d |  |
| 28 |  | MileStone: Finalize CG-OM w/CGEMS model | 0d | 2006-06-22 | 2006-06-22 | 27 |  | 35d |  |
| 29 |  | Database design and implementation | 7d | 2006-06-21 | 2006-06-29 |  |  | 30d |  |
| 30 |  | MileStone: Dev database ready | 0d | 2006-06-29 | 2006-06-29 | 29 |  | 30d |  |
| 31 |  | Generate API using caCORE-SDK | 18d | 2006-06-21 | 2006-07-14 |  |  | 19d |  |
| 32 |  | MileStone: Generate API using caCORE SDK | 0d | 2006-07-14 | 2006-07-14 | 31 |  | 19d |  |
| 33 | 1.3.3 | **Iteration 1b: Middle-tier implementation** | 0d | 2006-07-27 | 2006-07-27 |  |  | 36d |  |
| 34 |  | Middle-tier implementation | 25d | 2006-06-23 | 2006-07-27 |  |  | 0d |  |
| 35 |  | MileStone: Completed middle-tier implementation | 0d | 2006-07-27 | 2006-07-27 | 34 |  | 36d |  |
| 36 |  | Milestone: Demo caCORE and DTO APIs using Test Data Sets | 0d | 2006-07-14 | 2006-07-14 | 24 |  | 45d |  |
| 37 | 1.5 | **Transition Phase** | 21d | 2006-07-17 | 2006-08-14 | 24 |  | 19d |  |
| 38 | 1.5.1 | **QA** | 5d | 2006-07-17 | 2006-07-21 |  |  | 19d |  |
| 39 |  | Finalize Testplan | 5d | 2006-07-17 | 2006-07-21 |  |  | 19d |  |
| 40 |  | Finalize Test Cases | 5d | 2006-07-17 | 2006-07-21 |  |  | 19d |  |
| 41 | 1.5.2 | **Deploy** | 16d | 2006-07-24 | 2006-08-14 | 38 |  | 19d |  |
| 42 | 1.5.2.1 | **QA Server Deployment** | 10d | 2006-07-24 | 2006-08-04 |  |  | 19d |  |
| 43 |  | QA Testing | 10d | 2006-07-24 | 2006-08-04 |  |  | 19d | start no earlier than 2005-06-28 |
| 44 | 1.5.2.2 | **Staging Server Deployment** | 5d | 2006-08-07 | 2006-08-11 |  |  | 24d |  |
| 45 |  | Staging Testing | 5d | 2006-08-07 | 2006-08-11 | 43 |  | 24d |  |
| 46 | 1.5.2.3 | **Production Server Deployment** | 1d | 2006-08-14 | 2006-08-14 |  |  | 24d |  |
| 47 |  | Production Verification | 1d | 2006-08-14 | 2006-08-14 | 45 |  | 24d | start no earlier than 2005-06-13 |

## Version 2 (saved 2006-07-24)

Note of the change: Review prior to 8/3/2006 mtg

Last finish stays 2006-09-15. Complete tasks 0 → 20.

Changed:

| ID | Task | Start | Finish | Duration | Complete | Total float |
| --- | --- | --- | --- | --- | --- | --- |
| 1 | **CGEMS 1.0 Release** |  |  |  | 3% → 40% |  |
| 5 | **Inception Phase** |  | 2006-06-20 A |  | 3% → 100% | 63d → none |
| 6 | **Requirements Gathering** | 2006-04-04 A | 2006-06-13 A |  | 0% → 100% | 58.75d → none |
| 7 | NCICB/CGEMS team | 2006-04-04 A | 2006-05-29 A |  | 0% → 100% | 68.75d → none |
| 8 | Determine Basic Use Cases | 2006-04-04 A | 2006-05-29 A |  | 0% → 100% | 68.75d → none |
| 9 | Prioritize Use Cases | 2006-06-13 A | 2006-06-13 A |  | 0% → 100% | 58.75d → none |
| 10 | **Documentation** |  | 2006-06-20 A |  | 13% → 100% | 63d → none |
| 11 | Draft Project Plan | 2006-06-05 A | 2006-06-09 A |  | 0% → 100% | 70d → none |
| 12 | Draft Requirements Specification Document |  | 2006-06-20 A |  | 75% → 100% | 55d → none |
| 13 | Draft Test Plan | 2006-06-05 A | 2006-06-16 A |  | 0% → 100% | 65d → none |
| 14 | Draft Test Cases | 2006-06-05 A | 2006-06-16 A |  | 0% → 100% | 65d → none |
| 15 | Milestone: General Requirements Captured & Priortized | 2006-06-20 A | 2006-06-20 A |  | 0% → 100% | 63d → none |
| 16 | **Elaboration Phase** |  | 2006-07-27 → 2006-08-04 (+8d) | 34d → 40d | 42% → 99% | 36d → 30d |
| 17 | **Architecture** | 2006-06-21 A | 2006-06-30 A |  | 0% → 100% | 55d → none |
| 18 | Initial Draft of Architecture | 2006-06-21 A | 2006-06-27 A |  | 0% → 100% | 55d → none |
| 19 | Internal review with caIntegrator Team | 2006-06-27 A | 2006-06-27 A |  | 0% → 100% | 55d → none |
| 20 | Incorporate Comments/Feedback from the team review | 2006-06-28 A | 2006-06-28 A |  | 0% → 100% | 55d → none |
| 21 | Review architecture with the "Review Board" | 2006-06-28 A | 2006-06-28 A |  | 0% → 100% | 55d → none |
| 22 | Draft design document (caBIG template) | 2006-06-29 A | 2006-06-30 A |  | 0% → 100% | 55d → none |
| 23 | Milestone: Completed Design document | 2006-06-30 A | 2006-06-30 A |  | 0% → 100% | 55d → none |
| 24 | **Itreration 1: Generate caCORE-SDK API** |  | 2006-07-14 → 2006-07-26 (+12d) | 25d → 33d | 90% → 99% | 19d → 6d |
| 25 | Harmonize CGEMS UML model with caIntegrator |  | 2006-06-20 A |  | 90% → 100% | 0d → none |
| 26 | Harmozine CGEMS OM with CG-OM |  | 2006-06-21 A |  | 90% → 100% | 36.3d → none |
| 27 | MileStone: Finalize model with CGEMS stake holders | 2006-06-22 A | 2006-06-22 A |  | 0% → 100% | 0d → none |
| 28 | MileStone: Finalize CG-OM w/CGEMS model | 2006-06-22 A | 2006-06-22 A |  | 0% → 100% | 35d → none |
| 29 | Database design and implementation | 2006-06-21 → 2006-07-11 A (+20d) | 2006-06-29 → 2006-07-19 A (+20d) |  | 0% → 100% | 30d → none |
| 30 | MileStone: Dev database ready | 2006-06-29 → 2006-07-19 (+20d) | 2006-06-29 → 2006-07-19 (+20d) |  |  | 30d → 11d |
| 31 | Generate API using caCORE-SDK | 2006-06-21 → 2006-07-03 A (+12d) | 2006-07-14 → 2006-07-26 (+12d) |  | 0% → 66% | 19d → 63.57d |
| 32 | MileStone: Generate API using caCORE SDK | 2006-07-14 → 2006-07-26 A (+12d) | 2006-07-14 → 2006-07-26 A (+12d) |  | 0% → 100% | 19d → none |
| 33 | **Iteration 1b: Middle-tier implementation** | 2006-07-27 → 2006-08-04 (+8d) | 2006-07-27 → 2006-08-04 (+8d) |  |  | 36d → 30d |
| 34 | Middle-tier implementation | 2006-06-23 → 2006-07-10 A (+17d) | 2006-07-27 → 2006-08-04 (+8d) | 25d → 20d | 0% → 25% |  |
| 35 | MileStone: Completed middle-tier implementation | 2006-07-27 → 2006-08-04 (+8d) | 2006-07-27 → 2006-08-04 (+8d) |  |  | 36d → 30d |
| 36 | Milestone: Demo caCORE and DTO APIs using Test Data Sets | 2006-07-14 → 2006-07-26 (+12d) | 2006-07-14 → 2006-07-26 (+12d) |  |  | 45d → 37d |
| 37 | **Transition Phase** | 2006-07-17 → 2006-07-27 (+10d) | 2006-08-14 → 2006-08-31 (+17d) | 21d → 26d |  | 19d → 6d |
| 38 | **QA** | 2006-07-17 → 2006-07-27 (+10d) | 2006-07-21 → 2006-08-02 (+12d) |  |  | 19d → 6d |
| 39 | Finalize Testplan | 2006-07-17 → 2006-07-27 (+10d) | 2006-07-21 → 2006-08-02 (+12d) |  |  | 19d → 6d |
| 40 | Finalize Test Cases | 2006-07-17 → 2006-07-27 (+10d) | 2006-07-21 → 2006-08-02 (+12d) |  |  | 19d → 6d |
| 41 | **Deploy** | 2006-07-24 → 2006-08-03 (+10d) | 2006-08-14 → 2006-08-31 (+17d) | 16d → 21d |  | 19d → 6d |
| 42 | **QA Server Deployment** | 2006-07-24 → 2006-08-03 (+10d) | 2006-08-04 → 2006-08-16 (+12d) |  |  | 19d → 6d |
| 43 | QA Testing | 2006-07-24 → 2006-08-03 (+10d) | 2006-08-04 → 2006-08-16 (+12d) |  |  | 19d → 6d |
| 44 | **Staging Server Deployment** | 2006-08-07 → 2006-08-17 (+10d) | 2006-08-11 → 2006-08-30 (+19d) | 5d → 10d |  | 24d → 11d |
| 45 | Staging Testing | 2006-08-07 → 2006-08-17 (+10d) | 2006-08-11 → 2006-08-30 (+19d) | 5d → 10d |  | 24d → 11d |
| 46 | **Production Server Deployment** | 2006-08-14 → 2006-08-31 (+17d) | 2006-08-14 → 2006-08-31 (+17d) |  |  | 24d → 11d |
| 47 | Production Verification | 2006-08-14 → 2006-08-31 (+17d) | 2006-08-14 → 2006-08-31 (+17d) |  |  | 24d → 11d |
