# ISPY

How a schedule from MS Project changed from version to version. A marks actual dates.

## Version 1 (saved 2006-07-10)

Note of the change: initial revision

| ID | WBS | Task | Duration | Start | Finish | Predecessors | Complete | Total float | Constraint |
| --- | --- | --- | --- | --- | --- | --- | --- | --- | --- |
| 1 | 1 | **ISPY Analysis portal** | 183.24d? | 2006-03-28 A | 2006-12-08 |  | 25% | 0d |  |
| 2 | 1.1 | **Project Management and Control** | 50d | 2006-03-28 | 2006-06-05 |  |  | 133.24d |  |
| 3 |  | Project Management | 50d | 2006-03-28 | 2006-06-05 |  |  | 133.24d | start no earlier than 2006-03-28 |
| 4 |  | Project Control | 50d | 2006-03-28 | 2006-06-05 |  |  | 133.24d | finish no earlier than 2006-06-05 |
| 5 | 1.2 | **Inception Phase** | 50d | 2006-03-28 A | 2006-06-05 |  | 34% | 133.24d |  |
| 6 | 1.2.1 | **Requirements Gathering** | 50d | 2006-03-28 A | 2006-06-05 |  | 34% | 133.24d |  |
| 7 |  | Determine General Requirements | 1d | 2006-03-28 A | 2006-03-28 A |  | 100% |  | start no earlier than 2006-03-28 |
| 8 |  | Determine Basic Use Cases | 1d | 2006-03-29 A | 2006-03-29 A | 7 | 100% |  | start no earlier than 2006-03-28 |
| 9 |  | Prioritize Use Cases | 1d | 2006-03-30 A | 2006-03-30 A | 7, 8 | 100% |  |  |
| 10 |  | Milestone: General Requirements Captured | 0d | 2006-03-31 A | 2006-03-31 A | 9 | 100% |  |  |
| 11 | 1.2.1.5 | **Documentation** | 44d | 2006-04-05 A | 2006-06-05 |  | 26% | 133.24d |  |
| 12 |  | Draft Project Plan | 2d | 2006-04-05 A | 2006-04-06 A |  | 100% |  | start no earlier than 2006-04-05 |
| 13 |  | Add Feature Requests/Bugs into TestTrack | 2d | 2006-05-10 | 2006-05-11 |  |  | 150.24d |  |
| 14 |  | Draft Requirements Specification Document | 3d | 2006-05-12 A | 2006-05-16 A | 13 | 100% |  |  |
| 15 |  | Draft Design Document | 4d | 2006-05-17 A | 2006-05-22 | 14 | 40% | 143.24d |  |
| 16 |  | Draft Test Plan | 4d | 2006-05-17 | 2006-05-22 | 14 |  | 133.24d |  |
| 17 |  | Draft Test Cases | 10d | 2006-05-23 | 2006-06-05 | 16 |  | 133.24d |  |
| 18 | 1.3 | **Data Update Cycle** | 1d? | 2006-05-10 | 2006-05-10 |  |  | 151.24d |  |
| 19 |  | Data Refresh 1 | 1d? | 2006-05-10 | 2006-05-10 |  |  | 151.24d |  |
| 20 |  | Data Refresh 2 | 1d? | 2006-05-10 | 2006-05-10 |  |  | 151.24d |  |
| 21 | 1.4 | **Evolution Cycle (June release) : Elaboration & Construction** | 42d | 2006-04-21 A | 2006-06-19 |  | 91% | 0d |  |
| 22 | 1.4.1 | **Iteration 1** | 29d | 2006-04-21 A | 2006-05-31 A |  | 100% |  |  |
| 23 | 1.4.1.1 | **ID Mapper Functionality** | 11d | 2006-05-10 A | 2006-05-24 A |  | 100% |  |  |
| 24 |  | Create ID Mapping Service | 5d | 2006-05-11 A | 2006-05-17 A | 25 | 100% |  |  |
| 25 |  | Define ID Mapping File Format and create sample | 1d | 2006-05-10 A | 2006-05-10 A |  | 100% |  |  |
| 26 |  | Create ID Mapping Data File | 2d | 2006-05-11 A | 2006-05-12 A | 25 | 100% |  |  |
| 27 |  | Create ID Mapping GUI wireframe | 2d | 2006-05-10 A | 2006-05-11 A |  | 100% |  |  |
| 28 |  | Create ID Mapping UI | 5d | 2006-05-18 A | 2006-05-24 A | 24 | 100% |  |  |
| 29 | 1.4.1.2 | **User List Management Functionality** | 15d | 2006-05-10 A | 2006-05-30 A |  | 100% |  |  |
| 30 |  | Create wireframes for list management GUI | 3d | 2006-05-10 A | 2006-05-12 A |  | 100% |  |  |
| 31 |  | Implement List Management GUI | 12d | 2006-05-15 A | 2006-05-30 A | 30 | 100% |  | start no earlier than 2006-04-20 |
| 32 |  | Integrate List management into the application | 2.5d | 2006-05-18 A | 2006-05-22 A | 24 | 100% |  | start no earlier than 2006-04-24 |
| 33 | 1.4.1.3 | **Incorporate CDNA in High Order Analysis** | 29d | 2006-04-21 A | 2006-05-31 A |  | 100% |  |  |
| 34 |  | create sample CDNA R data file | 1d | 2006-04-21 A | 2006-04-21 A |  | 100% |  | start no earlier than 2006-04-21 |
| 35 |  | QA CDNA data | 5d | 2006-05-10 A | 2006-05-16 A |  | 100% |  |  |
| 36 |  | Develop SOP for CDNA data normalization | 2d | 2006-05-10 A | 2006-05-11 A |  | 100% |  |  |
| 37 |  | Normalize CDNA samples | 10d | 2006-05-17 A | 2006-05-30 A | 35, 36 | 100% |  | start no earlier than 2006-05-01 |
| 38 |  | Create Final CDNA R data file | 1d | 2006-05-31 A | 2006-05-31 A | 37 | 100% |  |  |
| 39 |  | Create CDNA annotation file | 3d | 2006-05-10 A | 2006-05-12 A |  | 100% |  |  |
| 40 | 1.4.1.4 | **Test** | 4d | 2006-05-10 A | 2006-05-16 A |  | 100% |  |  |
| 41 |  | Unit Test | 4d | 2006-05-10 A | 2006-05-15 A |  | 100% |  |  |
| 42 |  | Integration Test (Dev) | 0d | 2006-05-16 A | 2006-05-16 A | 41 | 100% |  |  |
| 43 |  | Milestone: Test Fixes on Dev | 0d | 2006-05-17 A | 2006-05-17 A | 40 | 100% |  |  |
| 44 | 1.4.2 | **Iteration 2** | 23d | 2006-05-03 A | 2006-06-02 |  | 86% | 6.6d |  |
| 45 | 1.4.2.1 | **Clinical Data modification** | 4d | 2006-05-03 A | 2006-05-08 A |  | 100% |  |  |
| 46 |  | Update clinical data file with new columns | 2d | 2006-05-03 A | 2006-05-04 A |  | 100% |  | start no earlier than 2006-05-03 |
| 47 |  | Modify clinical data parser to support new columns | 1d | 2006-05-05 A | 2006-05-05 A | 46 | 100% |  |  |
| 48 |  | Modify clinical report (PCA and HC) to handle new columns | 1d | 2006-05-08 A | 2006-05-08 A | 47 | 100% |  |  |
| 49 | 1.4.2.2 | **General Tasks** | 11.25d | 2006-05-10 A | 2006-05-25 A |  | 100% |  |  |
| 50 |  | Externalize data files | 1d | 2006-05-23 A | 2006-05-23 A |  | 100% |  |  |
| 51 |  | Externalize Properties | 2d | 2006-05-10 A | 2006-05-25 A | 50 | 100% |  |  |
| 52 | 1.4.2.3 | **Test** | 5d | 2006-05-25 A | 2006-06-01 A | 49, 45 | 100% |  |  |
| 53 |  | Unit Test | 4d | 2006-05-25 A | 2006-05-31 A |  | 100% |  |  |
| 54 |  | Integration Test (Dev) | 1d | 2006-05-31 A | 2006-06-01 A | 53 | 100% |  |  |
| 55 |  | Milestone: Test Fixes on Dev | 0d | 2006-06-01 A | 2006-06-01 A | 54 | 100% |  |  |
| 56 |  | Update design spec. | 2d | 2006-06-01 | 2006-06-02 | 22 |  | 6.6d |  |
| 57 | 1.4.3 | **Transition** | 11d | 2006-06-05 A | 2006-06-19 | 44 | 60% | 0d |  |
| 58 | 1.4.3.1 | **Testing and Deployment** | 3d | 2006-06-05 A | 2006-06-07 |  | 97% | 8d |  |
| 59 |  | Modify deployment scripts | 1d | 2006-06-05 A | 2006-06-05 A |  | 100% |  |  |
| 60 |  | Testing | 2d | 2006-06-06 A | 2006-06-07 | 59 | 95% | 8d |  |
| 61 | 1.4.3.2 | **Deployment** | 11d | 2006-06-05 A | 2006-06-19 |  | 50% | 0d |  |
| 62 |  | Deployment to QA | 1d | 2006-06-05 A | 2006-06-05 A | 23, 29, 33, 44 | 100% |  |  |
| 63 |  | QA Testing | 5d | 2006-06-06 A | 2006-06-12 | 62 | 90% | 0d |  |
| 64 |  | Deployment to Staging | 2d | 2006-06-13 | 2006-06-14 | 63 |  | 0d |  |
| 65 |  | Staging Testing | 3d | 2006-06-15 | 2006-06-19 | 64 |  | 0d |  |
| 66 | 1.5 | **Evolution Cycle (1.0 Release Elaboration & Construction)** | 123.24d | 2006-06-20 A | 2006-12-08 | 21 | 8% | 0d |  |
| 67 |  | Draft Project Plan | 2d | 2006-06-20 A | 2006-07-04 A |  | 100% |  |  |
| 68 | 1.5.2 | **Iteration 1 - Use cases and Documentation** | 22d | 2006-06-20 A | 2006-07-19 |  | 44% | 10.57d |  |
| 69 | 1.5.2.1 | **Requirements Gathering** | 11d | 2006-06-20 A | 2006-07-04 |  | 83% | 16.57d |  |
| 70 |  | Determine General Requirements | 4d | 2006-06-20 A | 2006-06-23 A | 21 | 100% |  | start no earlier than 2006-06-05 |

| ID | WBS | Task | Duration | Start | Finish | Predecessors | Complete | Total float | Constraint |
| --- | --- | --- | --- | --- | --- | --- | --- | --- | --- |
| 71 |  | Draft Wireframes | 4d | 2006-06-27 A | 2006-06-30 A | 70 | 100% |  |  |
| 72 |  | Determine Basic Use Cases | 2d | 2006-07-03 A | 2006-07-04 A | 71 | 100% |  | start no earlier than 2006-06-05 |
| 73 |  | MileStone: Completed Requirements specification | 0d | 2006-06-30 A | 2006-06-30 A | 71 | 100% |  |  |
| 74 |  | Determine backend data needs. | 2d | 2006-06-26 | 2006-06-27 | 70 |  | 21.57d |  |
| 75 | 1.5.2.2 | **Documentation** | 11d | 2006-06-20 A | 2006-07-05 |  | 56% | 21.57d |  |
| 76 |  | Draft Scope Document | 2d | 2006-07-03 A | 2006-07-05 A |  | 100% |  | start no earlier than 2006-06-26 |
| 77 |  | Draft Usecase documents | 3d | 2006-06-30 A | 2006-07-05 A | 72 | 100% |  |  |
| 78 |  | Draft Design Document | 4d | 2006-06-20 | 2006-06-23 |  |  | 28.57d |  |
| 79 |  | Milestone: Completed Design document | 0d | 2006-06-23 | 2006-06-23 | 78 |  | 28.57d |  |
| 80 |  | Define Interfaces for front to middle tier communication | 1w | 2006-06-28 | 2006-07-04 | 74 |  | 21.57d |  |
| 81 | 1.5.2.4 | **Implement Clinical Query GUI using file based service** | 11d | 2006-07-05 | 2006-07-19 |  |  | 10.57d |  |
| 82 |  | Modify file based clinical service to support GUI development | 1d | 2006-07-05 | 2006-07-05 |  |  | 20.57d | start no earlier than 2006-07-05 |
| 83 |  | Implement Clinical Query GUI and report | 7d | 2006-07-11 | 2006-07-19 |  |  | 10.57d | start no earlier than 2006-07-11 |
| 84 | 1.5.3 | **Iteration 2 - Integration with NCIA** | 32d | 2006-07-19 | 2006-09-01 | 68 |  | 10.57d |  |
| 85 | 1.5.3.1 | **Requirements Gathering** | 7d | 2006-07-20 | 2006-07-28 |  |  | 10.57d |  |
| 86 |  | Determine General Requirements | 3d | 2006-07-20 | 2006-07-24 |  |  | 10.57d | start no earlier than 2006-06-05 |
| 87 |  | Determine use of CSM / LDAP | 1d | 2006-07-25 | 2006-07-25 | 86 |  | 10.57d |  |
| 88 |  | Determine Basic Use Cases | 3d | 2006-07-26 | 2006-07-28 | 87 |  | 10.57d | start no earlier than 2006-06-05 |
| 89 |  | MileStone: Completed Requirements specification | 0d | 2006-07-28 | 2006-07-28 | 86, 88 |  | 10.57d | start no earlier than 2006-06-05 |
| 90 | 1.5.3.2 | **Design** | 5d | 2006-07-31 | 2006-08-04 | 85 |  | 10.57d |  |
| 91 |  | Design method for mapping ids from ISPY to NCIA | 1w | 2006-07-31 | 2006-08-04 |  |  | 10.57d |  |
| 92 |  | Design method to display text annotation along with images | 2d | 2006-07-31 | 2006-08-01 |  |  | 13.57d |  |
| 93 | 1.5.3.3 | **Data Submission to NCIA system** | 12d | 2006-07-19 | 2006-08-04 |  |  | 10.57d |  |
| 94 |  | Milestone: receive ISPY image data | 0d | 2006-08-04 | 2006-08-04 | 90 |  | 10.57d |  |
| 95 |  | Milestone: Images available in the NCIA system | 0d | 2006-07-19 | 2006-07-19 |  |  | 22.57d |  |
| 96 | 1.5.3.4 | **Implementation** | 6d | 2006-08-04 | 2006-08-14 | 93 |  | 10.57d |  |
| 97 |  | Milestone: NICA system has linkin capability | 0d | 2006-08-04 | 2006-08-04 |  |  | 13.57d |  |
| 98 |  | Implement deep links into NCIA system modifying the clinical report | 3d | 2006-08-10 | 2006-08-14 | 97, 99 |  | 10.57d |  |
| 99 |  | Implement CSM/LDAP authentication | 3d | 2006-08-07 | 2006-08-09 |  |  | 10.57d |  |
| 100 |  | Milestone: Completed Design document | 0d | 2006-08-04 | 2006-08-04 |  |  | 16.57d |  |
| 101 | 1.5.3.5 | **Test** | 14d | 2006-08-15 | 2006-09-01 | 96 |  | 10.57d |  |
| 102 |  | Unit Test | 4d | 2006-08-15 | 2006-08-18 |  |  | 10.57d |  |
| 103 |  | Integration Test (Dev) | 10d | 2006-08-21 | 2006-09-01 | 102 |  | 10.57d |  |
| 104 |  | Milestone: Test Fixes on Dev | 0d | 2006-09-01 | 2006-09-01 | 103 |  | 10.57d |  |
| 105 | 1.5.4 | **Iteration 2b - Prototype design & implementation of the Integrated Data displays** | 16d | 2006-06-20 | 2006-07-11 |  |  | 107.24d |  |
| 106 | 1.5.4.1 | **Correlation Displays** | 16d | 2006-06-20 | 2006-07-11 |  |  | 107.24d |  |
| 107 |  | Design/Prototype of analyis server enhancement to support correlation | 1w | 2006-07-05 | 2006-07-11 | 76 |  | 107.24d |  |
| 108 |  | GUI display of correlation | 3w | 2006-06-20 | 2006-07-10 |  |  | 108.24d |  |
| 109 | 1.5.5 | **Iteration 3 - Individual Data Type Query and Retrieval** | 38.57d | 2006-09-01 | 2006-10-26 | 84 |  | 0d |  |
| 110 | 1.5.5.1 | **Refactor App from Evolution Cycle (June release) to use new backend** | 10d | 2006-09-04 | 2006-09-15 |  |  | 28.57d |  |
| 111 |  | Convert file based annotation to use db | 4d | 2006-09-04 | 2006-09-07 |  |  | 28.57d |  |
| 112 |  | Convert ID lookup to use db | 3d | 2006-09-08 | 2006-09-12 | 111 |  | 28.57d |  |
| 113 |  | Convert clinical file based calls to use clinical object model | 3d | 2006-09-13 | 2006-09-15 | 112 |  | 28.57d |  |
| 114 | 1.5.5.2 | **Implement ID lookup in database** | 5d | 2006-09-04 | 2006-09-08 |  |  | 33.57d |  |
| 115 |  | populate tables | 2d | 2006-09-04 | 2006-09-05 |  |  | 33.57d |  |
| 116 |  | develop middle tier and backend code | 3d | 2006-09-06 | 2006-09-08 | 115 |  | 33.57d |  |
| 117 | 1.5.5.3 | **Implement Clinical Query Functionality** | 4d | 2006-09-01 | 2006-09-07 |  |  | 10.57d |  |
| 118 |  | CG - Model with I-SPY Finding Pkgs | 16d | 2006-06-15 | 2006-07-06 |  |  | 22d |  |
| 119 |  | Milestone: Clinical Object Model Supports Clinical Queries | 0d | 2006-09-01 | 2006-09-01 | 118 |  | 14.57d |  |
| 120 |  | Implement Middle Tier code to support Clinical Queries | 4d | 2006-09-04 | 2006-09-07 |  |  | 10.57d |  |
| 121 |  | Populate Clinical Database tables | 2d | 2006-09-04 | 2006-09-05 |  |  | 12.57d |  |
| 122 | 1.5.5.4 | **Implement FISH Query Functionality** | 17.57d | 2006-09-08 | 2006-10-03 | 117 |  | 0d |  |
| 123 |  | Implement FISH Query GUI | 5d | 2006-09-08 | 2006-09-14 |  |  | 10.57d |  |
| 124 |  | Implement Middle Tier code to support FISH | 8d | 2006-09-13 | 2006-09-25 |  |  | 0d |  |
| 125 |  | MileStone: Middle-tier for FISH completed | 0d | 2006-09-25 | 2006-09-25 | 124 |  | 0d |  |
| 126 |  | Port existing data portal FISH functionality | 4d | 2006-09-25 | 2006-10-03 | 125 |  | 0d |  |
| 127 |  | Populate FISH Database tables | 2d | 2006-09-08 | 2006-09-11 |  |  | 15.57d |  |
| 128 | 1.5.5.5 | **Implement IHC Query Functionality** | 19.57d | 2006-09-08 | 2006-10-05 | 117 |  | 5d |  |
| 129 |  | Implement IHC Query GUI | 5d | 2006-09-08 | 2006-09-14 |  |  | 19.57d |  |
| 130 |  | Implement Middle Tier Code to support IHC | 8d | 2006-09-25 | 2006-10-05 |  |  | 2d |  |
| 131 |  | MileStone: Middle-tier for IHC completed | 0d | 2006-10-05 | 2006-10-05 | 130 |  | 5d |  |
| 132 |  | Port existing data portal IHC functionality | 4d | 2006-09-08 | 2006-09-13 | 117 |  | 20.57d |  |
| 133 |  | Populate IHC Database tables | 2d | 2006-09-08 | 2006-09-11 |  |  | 22.57d |  |
| 134 | 1.5.5.6 | **Implement P53 Query Functionality** | 12d | 2006-10-03 | 2006-10-19 | 122 |  | 0d |  |
| 135 |  | Implement P53 Query GUI | 5d | 2006-10-03 | 2006-10-19 |  |  | 0d |  |
| 136 |  | Implement Middle Tier Code to support P53 | 4d | 2006-10-05 | 2006-10-11 |  |  | 2d |  |
| 137 |  | MileStone: Middle-tier for P53 completed | 0d | 2006-10-11 | 2006-10-11 | 136 |  | 2d |  |
| 138 |  | Port existing data portal P53 functionality | 4d | 2006-10-11 | 2006-10-17 | 137 |  | 2d |  |
| 139 |  | Populate P53 Database tables | 2d | 2006-10-03 | 2006-10-05 |  |  | 10d |  |
| 140 | 1.5.5.7 | **Implement Gene Expression Query Functionality** | 5d | 2006-10-05 | 2006-10-12 | 128 |  | 5d |  |

| ID | WBS | Task | Duration | Start | Finish | Predecessors | Total float |
| --- | --- | --- | --- | --- | --- | --- | --- |
| 141 |  | Implement GE Query GUI | 5d | 2006-10-05 | 2006-10-12 |  | 5d |
| 142 |  | Implement Middle Tier Code to support GE | 8d | 2006-09-25 | 2006-10-05 |  | 0d |
| 143 |  | MileStone: Middle-tier for GE completed | 0d | 2006-10-05 | 2006-10-05 | 142 | 6d |
| 144 |  | Port existing data portal gene expression functionality | 4d | 2006-10-05 | 2006-10-11 | 143 | 6d |
| 145 |  | Populate Gene Expression Database tables | 2d | 2006-10-05 | 2006-10-09 |  | 8d |
| 146 | 1.5.5.8 | **Test** | 10d | 2006-10-12 | 2006-10-26 | 140 | 0d |
| 147 |  | Unit Test | 4d | 2006-10-12 | 2006-10-18 |  | 6d |
| 148 |  | Integration Test (Dev) | 5d | 2006-10-19 | 2006-10-26 | 117, 122, 128, 134, 140 | 0d |
| 149 |  | Milestone: Test Fixes on Dev | 0d | 2006-10-26 | 2006-10-26 | 148 | 0d |
| 150 | 1.5.6 | **Iteration 4 - Integration of the Integrated Data displays** | 25.67d | 2006-10-26 | 2006-12-01 | 109 | 0d |
| 151 | 1.5.6.1 | **Correlation Displays** | 16.67d | 2006-10-26 | 2006-11-20 |  | 0d |
| 152 |  | Analyis server enhancement to support correlation | 3d | 2006-10-26 | 2006-10-31 |  | 13.67d |
| 153 |  | GUI display of correlation | 16.67d | 2006-10-26 | 2006-11-20 |  | 0d |
| 154 | 1.5.6.2 | **Test** | 9d | 2006-11-20 | 2006-12-01 | 151 | 0d |
| 155 |  | Unit Test | 4d | 2006-11-20 | 2006-11-24 |  | 0d |
| 156 |  | Integration Test (Dev) | 5d | 2006-11-24 | 2006-12-01 | 155 | 0d |
| 157 |  | Milestone: Test Fixes on Dev | 0d | 2006-11-20 | 2006-11-20 |  | 9d |
| 158 | 1.5.7 | **Transition** | 5d | 2006-12-01 | 2006-12-08 | 154 | 0d |
| 159 |  | Modify deployment scripts | 1d | 2006-12-01 | 2006-12-04 |  | 4d |
| 160 |  | Deployment to QA | 1d | 2006-12-01 | 2006-12-04 |  | 4d |
| 161 |  | Testing on QA | 5d | 2006-12-01 | 2006-12-08 |  | 0d |
| 162 |  | Deployment to Staging | 2d | 2006-12-01 | 2006-12-05 |  | 3d |
| 163 |  | Testing on Staging | 3d | 2006-12-01 | 2006-12-06 |  | 2d |
| 164 |  | Deployment to Production | 2d | 2006-12-01 | 2006-12-05 |  | 3d |
| 165 |  | Testing on Production | 2d | 2006-12-01 | 2006-12-05 |  | 3d |

## Version 2 (saved 2006-08-02)

Note of the change: Review prior to 8/3/2006 mtg

Last finish 2006-12-08 → 2006-12-15 (+7d). Complete tasks 40 → 42.

Changed:

| ID | Task | Start | Finish | Duration | Complete | Total float | Predecessors | Other |
| --- | --- | --- | --- | --- | --- | --- | --- | --- |
| 1 | **ISPY Analysis portal** |  | 2006-12-08 → 2006-12-15 (+7d) | 183.24d? → 188.42d? | 25% → 27% |  |  |  |
| 66 | **Evolution Cycle (1.0 Release Elaboration & Construction)** |  | 2006-12-08 → 2006-12-15 (+7d) | 123.24d → 128.42d | 8% → 14% |  |  |  |
| 68 | **Iteration 1 - Use cases and Documentation** |  | 2006-07-19 → 2006-08-14 (+26d) | 22d → 39.75d | 44% → 72% | 10.57d → 0d |  |  |
| 69 | **Requirements Gathering** |  | 2006-07-04 → 2006-07-17 (+13d) | 11d → 19d | 83% → 92% | 16.57d → 20.75d |  |  |
| 71 | Draft Wireframes |  | 2006-06-30 A → 2006-06-30 |  | 100% → 75% | none → 30.75d |  |  |
| 74 | Determine backend data needs. | 2006-06-26 → 2006-07-13 A (+17d) | 2006-06-27 → 2006-07-17 A (+20d) |  | 0% → 100% | 21.57d → none |  |  |
| 75 | **Documentation** | 2006-06-20 A → 2006-07-03 A (+13d) | 2006-07-05 → 2006-08-03 (+29d) | 11d → 23.75d | 56% → 33% | 21.57d → 7d |  |  |
| 77 | Draft Usecase documents | 2006-06-30 A → 2006-07-12 A (+12d) | 2006-07-05 A → 2006-07-17 (+12d) |  | 100% → 75% | none → 0d |  |  |
| 78 | Draft Design Document | 2006-06-20 → 2006-07-24 (+34d) | 2006-06-23 → 2006-08-03 (+41d) | 4d → 8d |  | 28.57d → 0d | none → 77FS+5d | resources HarrisMA → HarrisMA [50%] |
| 79 | Milestone: Completed Design document | 2006-06-23 → 2006-08-03 (+41d) | 2006-06-23 → 2006-08-03 (+41d) |  |  | 28.57d → 7d |  |  |
| 80 | Define Interfaces for front to middle tier communication | 2006-06-28 → 2006-07-10 A (+12d) | 2006-07-04 → 2006-07-17 A (+13d) |  | 0% → 100% | 21.57d → none |  | resources RossoK → GeorgeDa |
| 81 | **Implement Clinical Query GUI using file based service** | 2006-07-05 → 2006-08-03 A (+29d) | 2006-07-19 → 2006-08-14 (+26d) | 11d → 7d | 0% → 88% | 10.57d → 0d | none → 78 |  |
| 82 | Modify file based clinical service to support GUI development | 2006-07-05 → 2006-08-03 (+29d) | 2006-07-05 → 2006-08-04 (+30d) |  |  | 20.57d → 6d |  |  |
| 83 | Implement Clinical Query GUI and report | 2006-07-11 → 2006-08-03 A (+23d) | 2006-07-19 → 2006-08-14 A (+26d) |  | 0% → 100% | 10.57d → none |  |  |
| 84 | **Iteration 2a - Integration with NCIA** | 2006-07-19 → 2006-08-14 (+26d) | 2006-09-01 → 2006-09-27 (+26d) |  |  | 10.57d → 0d |  | was named Iteration 2 - Integration with NCIA |
| 85 | **Requirements Gathering** | 2006-07-20 → 2006-08-14 (+25d) | 2006-07-28 → 2006-08-23 (+26d) |  |  | 10.57d → 0d |  |  |
| 86 | Determine General Requirements | 2006-07-20 → 2006-08-14 (+25d) | 2006-07-24 → 2006-08-17 (+24d) |  |  | 10.57d → 0d |  |  |
| 87 | Determine use of CSM / LDAP | 2006-07-25 → 2006-08-17 (+23d) | 2006-07-25 → 2006-08-18 (+24d) |  |  | 10.57d → 0d |  |  |
| 88 | Determine Basic Use Cases | 2006-07-26 → 2006-08-18 (+23d) | 2006-07-28 → 2006-08-23 (+26d) |  |  | 10.57d → 0d |  |  |
| 89 | MileStone: Completed Requirements specification | 2006-07-28 → 2006-08-23 (+26d) | 2006-07-28 → 2006-08-23 (+26d) |  |  | 10.57d → 0d |  |  |
| 90 | **Design** | 2006-07-31 → 2006-08-23 (+23d) | 2006-08-04 → 2006-08-30 (+26d) |  |  | 10.57d → 0d |  |  |
| 91 | Design method for mapping ids from ISPY to NCIA | 2006-07-31 → 2006-08-23 (+23d) | 2006-08-04 → 2006-08-30 (+26d) |  |  | 10.57d → 0d |  |  |
| 92 | Design method to display text annotation along with images | 2006-07-31 → 2006-08-23 (+23d) | 2006-08-01 → 2006-08-25 (+24d) |  |  | 13.57d → 3d |  |  |
| 93 | **Data Submission to NCIA system** | 2006-07-19 → 2006-08-14 (+26d) | 2006-08-04 → 2006-08-30 (+26d) |  |  | 10.57d → 0d |  |  |
| 94 | Milestone: receive ISPY image data | 2006-08-04 → 2006-08-30 (+26d) | 2006-08-04 → 2006-08-30 (+26d) |  |  | 10.57d → 0d |  |  |
| 95 | Milestone: Images available in the NCIA system | 2006-07-19 → 2006-08-14 (+26d) | 2006-07-19 → 2006-08-14 (+26d) |  |  | 22.57d → 12d |  |  |
| 96 | **Implementation** | 2006-08-04 → 2006-08-30 (+26d) | 2006-08-14 → 2006-09-07 (+24d) |  |  | 10.57d → 0d |  |  |
| 97 | Milestone: NICA system has linkin capability | 2006-08-04 → 2006-08-30 (+26d) | 2006-08-04 → 2006-08-30 (+26d) |  |  | 13.57d → 3d |  |  |
| 98 | Implement deep links into NCIA system modifying the clinical report | 2006-08-10 → 2006-09-04 (+25d) | 2006-08-14 → 2006-09-07 (+24d) |  |  | 10.57d → 0d |  |  |
| 99 | Implement CSM/LDAP authentication | 2006-08-07 → 2006-08-30 (+23d) | 2006-08-09 → 2006-09-04 (+26d) |  |  | 10.57d → 0d |  |  |
| 100 | Milestone: Completed Design document | 2006-08-04 → 2006-08-30 (+26d) | 2006-08-04 → 2006-08-30 (+26d) |  |  | 16.57d → 6d |  |  |
| 101 | **Test** | 2006-08-15 → 2006-09-07 (+23d) | 2006-09-01 → 2006-09-27 (+26d) |  |  | 10.57d → 0d |  |  |
| 102 | Unit Test | 2006-08-15 → 2006-09-07 (+23d) | 2006-08-18 → 2006-09-13 (+26d) |  |  | 10.57d → 0d |  |  |
| 103 | Integration Test (Dev) | 2006-08-21 → 2006-09-13 (+23d) | 2006-09-01 → 2006-09-27 (+26d) |  |  | 10.57d → 0d |  |  |
| 104 | Milestone: Test Fixes on Dev | 2006-09-01 → 2006-09-27 (+26d) | 2006-09-01 → 2006-09-27 (+26d) |  |  | 10.57d → 0d |  |  |
| 109 | **Iteration 3 - Individual Data Type Query and Retrieval** | 2006-09-01 → 2006-09-27 (+26d) | 2006-10-26 → 2006-11-02 (+7d) | 38.57d → 26d |  |  |  |  |
| 110 | **Refactor App from Evolution Cycle (June release) to use new backend** | 2006-09-04 → 2006-09-27 (+23d) | 2006-09-15 → 2006-10-11 (+26d) |  |  | 28.57d → 16d |  |  |
| 111 | Convert file based annotation to use db | 2006-09-04 → 2006-09-27 (+23d) | 2006-09-07 → 2006-10-03 (+26d) |  |  | 28.57d → 16d |  |  |
| 112 | Convert ID lookup to use db | 2006-09-08 → 2006-10-03 (+25d) | 2006-09-12 → 2006-10-06 (+24d) |  |  | 28.57d → 16d |  |  |
| 113 | Convert clinical file based calls to use clinical object model | 2006-09-13 → 2006-10-06 (+23d) | 2006-09-15 → 2006-10-11 (+26d) |  |  | 28.57d → 16d |  |  |
| 114 | **Implement ID lookup in database** | 2006-09-04 → 2006-09-27 (+23d) | 2006-09-08 → 2006-10-04 (+26d) |  |  | 33.57d → 21d |  |  |
| 115 | populate tables | 2006-09-04 → 2006-09-27 (+23d) | 2006-09-05 → 2006-09-29 (+24d) |  |  | 33.57d → 21d |  |  |
| 116 | develop middle tier and backend code | 2006-09-06 → 2006-09-29 (+23d) | 2006-09-08 → 2006-10-04 (+26d) |  |  | 33.57d → 21d |  |  |
| 117 | **Implement Clinical Query Functionality** | 2006-09-01 → 2006-09-27 (+26d) | 2006-09-07 → 2006-10-03 (+26d) |  |  | 10.57d → 0d |  |  |
| 118 | CG - Model with I-SPY Finding Pkgs | 2006-06-15 → 2006-06-27 A (+12d) | 2006-07-06 → 2006-07-18 A (+12d) |  | 0% → 100% | 22d → none |  |  |
| 119 | Milestone: Clinical Object Model Supports Clinical Queries | 2006-09-01 → 2006-09-27 (+26d) | 2006-09-01 → 2006-09-27 (+26d) |  |  | 14.57d → 4d |  |  |
| 120 | Implement Middle Tier code to support Clinical Queries | 2006-09-04 → 2006-09-27 (+23d) | 2006-09-07 → 2006-10-03 (+26d) |  |  | 10.57d → 0d |  |  |
| 121 | Populate Clinical Database tables | 2006-09-04 → 2006-09-27 (+23d) | 2006-09-05 → 2006-09-29 (+24d) |  |  | 12.57d → 2d |  |  |
| 122 | **Implement FISH Query Functionality** | 2006-09-08 → 2006-10-03 (+25d) | 2006-10-03 → 2006-10-19 (+16d) | 17.57d → 12d |  |  |  |  |
| 123 | Implement FISH Query GUI | 2006-09-08 → 2006-10-03 (+25d) | 2006-09-14 → 2006-10-19 (+35d) |  |  | 10.57d → 0d |  |  |
| 124 | Implement Middle Tier code to support FISH | 2006-09-13 → 2006-09-21 (+8d) | 2006-09-25 → 2006-10-03 (+8d) |  |  |  |  |  |
| 125 | MileStone: Middle-tier for FISH completed | 2006-09-25 → 2006-10-03 (+8d) | 2006-09-25 → 2006-10-03 (+8d) |  |  | 0d → 1d |  |  |
| 126 | Port existing data portal FISH functionality | 2006-09-25 → 2006-10-03 (+8d) | 2006-10-03 → 2006-10-18 (+15d) |  |  | 0d → 1d |  |  |
| 127 | Populate FISH Database tables | 2006-09-08 → 2006-10-03 (+25d) | 2006-09-11 → 2006-10-05 (+24d) |  |  | 15.57d → 10d |  |  |
| 128 | **Implement IHC Query Functionality** | 2006-09-08 → 2006-10-03 (+25d) | 2006-10-05 → 2006-10-13 (+8d) | 19.57d → 7.82d |  | 5d → 4.18d |  |  |
| 129 | Implement IHC Query GUI | 2006-09-08 → 2006-10-03 (+25d) | 2006-09-14 → 2006-10-10 (+26d) |  |  | 19.57d → 7d |  |  |
| 130 | Implement Middle Tier Code to support IHC | 2006-09-25 → 2006-10-03 (+8d) | 2006-10-05 → 2006-10-13 (+8d) |  |  | 2d → 1.18d |  |  |
| 131 | MileStone: Middle-tier for IHC completed | 2006-10-05 → 2006-10-13 (+8d) | 2006-10-05 → 2006-10-13 (+8d) |  |  | 5d → 3d |  |  |
| 132 | Port existing data portal IHC functionality | 2006-09-08 → 2006-10-03 (+25d) | 2006-09-13 → 2006-10-09 (+26d) |  |  | 20.57d → 8d |  |  |
| 133 | Populate IHC Database tables | 2006-09-08 → 2006-10-03 (+25d) | 2006-09-11 → 2006-10-05 (+24d) |  |  | 22.57d → 10d |  |  |
| 134 | **Implement P53 Query Functionality** | 2006-10-03 → 2006-10-19 (+16d) | 2006-10-19 → 2006-10-26 (+7d) | 12d → 5d |  |  |  |  |
| 135 | Implement P53 Query GUI | 2006-10-03 → 2006-10-19 (+16d) | 2006-10-19 → 2006-10-26 (+7d) |  |  |  |  |  |
| 136 | Implement Middle Tier Code to support P53 | 2006-10-05 → 2006-10-13 (+8d) | 2006-10-11 → 2006-10-19 (+8d) |  |  | 2d → 1.18d |  |  |
| 137 | MileStone: Middle-tier for P53 completed | 2006-10-11 → 2006-10-19 (+8d) | 2006-10-11 → 2006-10-19 (+8d) |  |  | 2d → 1d |  |  |
| 138 | Port existing data portal P53 functionality | 2006-10-11 → 2006-10-19 (+8d) | 2006-10-17 → 2006-10-25 (+8d) |  |  | 2d → 1d |  |  |
| 139 | Populate P53 Database tables | 2006-10-03 → 2006-10-19 (+16d) | 2006-10-05 → 2006-10-23 (+18d) |  |  | 10d → 3d |  |  |
| 140 | **Implement Gene Expression Query Functionality** | 2006-10-05 → 2006-10-13 (+8d) | 2006-10-12 → 2006-10-20 (+8d) |  |  | 5d → 4.18d |  |  |
| 141 | Implement GE Query GUI | 2006-10-05 → 2006-10-13 (+8d) | 2006-10-12 → 2006-10-20 (+8d) |  |  | 5d → 3d |  |  |
| 142 | Implement Middle Tier Code to support GE | 2006-09-25 → 2006-10-03 (+8d) | 2006-10-05 → 2006-10-13 (+8d) |  |  |  |  |  |
| 143 | MileStone: Middle-tier for GE completed | 2006-10-05 → 2006-10-13 (+8d) | 2006-10-05 → 2006-10-13 (+8d) |  |  | 6d → 4d |  |  |

| ID | Task | Start | Finish | Duration | Total float |
| --- | --- | --- | --- | --- | --- |
| 144 | Port existing data portal gene expression functionality | 2006-10-05 → 2006-10-13 (+8d) | 2006-10-11 → 2006-10-19 (+8d) |  | 6d → 4d |
| 145 | Populate Gene Expression Database tables | 2006-10-05 → 2006-10-13 (+8d) | 2006-10-09 → 2006-10-17 (+8d) |  | 8d → 6d |
| 146 | **Test** | 2006-10-12 → 2006-10-20 (+8d) | 2006-10-26 → 2006-11-02 (+7d) | 10d → 9.18d |  |
| 147 | Unit Test | 2006-10-12 → 2006-10-20 (+8d) | 2006-10-18 → 2006-10-26 (+8d) |  | 6d → 4d |
| 148 | Integration Test (Dev) | 2006-10-19 → 2006-10-26 (+7d) | 2006-10-26 → 2006-11-02 (+7d) |  |  |
| 149 | Milestone: Test Fixes on Dev | 2006-10-26 → 2006-11-02 (+7d) | 2006-10-26 → 2006-11-02 (+7d) |  |  |
| 150 | **Iteration 4 - Integration of the Integrated Data displays** | 2006-10-26 → 2006-11-02 (+7d) | 2006-12-01 → 2006-12-08 (+7d) |  |  |
| 151 | **Correlation Displays** | 2006-10-26 → 2006-11-02 (+7d) | 2006-11-20 → 2006-11-27 (+7d) |  |  |
| 152 | Analyis server enhancement to support correlation | 2006-10-26 → 2006-11-02 (+7d) | 2006-10-31 → 2006-11-07 (+7d) |  |  |
| 153 | GUI display of correlation | 2006-10-26 → 2006-11-02 (+7d) | 2006-11-20 → 2006-11-27 (+7d) |  |  |
| 154 | **Test** | 2006-11-20 → 2006-11-27 (+7d) | 2006-12-01 → 2006-12-08 (+7d) |  |  |
| 155 | Unit Test | 2006-11-20 → 2006-11-27 (+7d) | 2006-11-24 → 2006-12-01 (+7d) |  |  |
| 156 | Integration Test (Dev) | 2006-11-24 → 2006-12-01 (+7d) | 2006-12-01 → 2006-12-08 (+7d) |  |  |
| 157 | Milestone: Test Fixes on Dev | 2006-11-20 → 2006-11-27 (+7d) | 2006-11-20 → 2006-11-27 (+7d) |  |  |
| 158 | **Transition** | 2006-12-01 → 2006-12-08 (+7d) | 2006-12-08 → 2006-12-15 (+7d) |  |  |
| 159 | Modify deployment scripts | 2006-12-01 → 2006-12-08 (+7d) | 2006-12-04 → 2006-12-11 (+7d) |  |  |
| 160 | Deployment to QA | 2006-12-01 → 2006-12-08 (+7d) | 2006-12-04 → 2006-12-11 (+7d) |  |  |
| 161 | Testing on QA | 2006-12-01 → 2006-12-08 (+7d) | 2006-12-08 → 2006-12-15 (+7d) |  |  |
| 162 | Deployment to Staging | 2006-12-01 → 2006-12-08 (+7d) | 2006-12-05 → 2006-12-12 (+7d) |  |  |
| 163 | Testing on Staging | 2006-12-01 → 2006-12-08 (+7d) | 2006-12-06 → 2006-12-13 (+7d) |  |  |
| 164 | Deployment to Production | 2006-12-01 → 2006-12-08 (+7d) | 2006-12-05 → 2006-12-12 (+7d) |  |  |
| 165 | Testing on Production | 2006-12-01 → 2006-12-08 (+7d) | 2006-12-05 → 2006-12-12 (+7d) |  |  |

## Version 3 (saved 2006-09-11)

Note of the change: tracked completion of tasks, updated schedule to accomodate new tasks.

Last finish 2006-12-15 → 2007-01-05 (+21d). Complete tasks 42 → 57.

Added:

| ID | Task | Duration | Start | Finish | Predecessors | Constraint | Resources |
| --- | --- | --- | --- | --- | --- | --- | --- |
| 104 | **Transition** | 12d | 2006-10-11 | 2006-10-26 | 103 |  |  |
| 105 | Modify deployment scripts | 1d | 2006-10-11 | 2006-10-11 |  |  | HarrisMA |
| 106 | Deployment to QA (Iterations 1, 2) | 1d | 2006-10-11 | 2006-10-11 |  |  | WuYe |
| 107 | Testing on QA | 5d | 2006-10-11 | 2006-10-17 |  |  | LongY |
| 108 | Deployment to Staging (Iterations 1,2) | 2d | 2006-10-18 | 2006-10-19 | 107 |  | Systems |
| 109 | Testing on Staging | 5d | 2006-10-20 | 2006-10-26 | 108 |  | LongY |
| 113 | Present storyboard to investigators and incorporate changes | 1d? | 2006-08-21 A | 2006-09-08 A |  |  | HarrisMA |
| 114 | Create detailed wireframes of Correlation Input Forms | 4.25d | 2006-08-17 A | 2006-09-08 A |  | finish no earlier than 2006-08-23 | RossoK |
| 116 | Implement back end code needed to support correlation | 5d | 2006-09-11 | 2006-09-15 | 114 |  |  |
| 118 | **Box and Wisker categoric displays** | 5d | 2006-11-01 | 2006-11-07 | 111 |  |  |
| 119 | Create detailed wireframes for input forms for box and wisker display | 2d | 2006-11-01 | 2006-11-02 |  |  | RossoK |
| 120 | Customize box and wisker plot classes to support ISPY | 5d | 2006-11-01 | 2006-11-07 |  |  | RossoK |
| 121 | Develop middle tier code to support ISPY box and wisker categoric plots | 5d | 2006-11-01 | 2006-11-07 |  |  | RossoK [50%]; HarrisMA [50%] |
| 122 | **Analysis Enhancements** | 5d | 2006-10-27 | 2006-11-02 | 84 |  |  |
| 123 | Implement paired t-test for across timepoint analysis | 5d | 2006-10-27 | 2006-11-02 |  |  | LiuH |
| 124 | Modify analysis server and messaging to support paired t-test | 2d | 2006-10-27 | 2006-10-30 |  |  | HarrisMA |

Removed: 97 Milestone: NICA system has linkin capability; 140 Implement Gene Expression Query Functionality; 141 Implement GE Query GUI; 142 Implement Middle Tier Code to support GE; 143 MileStone: Middle-tier for GE completed; 144 Port existing data portal gene expression functionality; 145 Populate Gene Expression Database tables; 150 Iteration 4 - Integration of the Integrated Data displays; 151 Correlation Displays; 153 GUI display of correlation

Changed:

| ID | Task | Finish | Duration | Complete | Total float | Other |
| --- | --- | --- | --- | --- | --- | --- |
| 1 | **ISPY Analysis portal** | 2006-12-15 → 2007-01-05 (+21d) | 188.42d? → 204d? | 27% → 34% |  | baseline start none → 2006-03-28; baseline finish none → 2007-01-15 |
| 2 | **Project Management and Control** |  |  |  | 138.42d → 154d | baseline start none → 2006-03-28; baseline finish none → 2006-06-05 |
| 3 | Project Management |  |  |  | 137.24d → 129d | baseline start none → 2006-03-28; baseline finish none → 2006-06-05 |
| 4 | Project Control |  |  |  | 137.24d → 129d | baseline start none → 2006-03-28; baseline finish none → 2006-06-05 |
| 5 | **Inception Phase** |  |  |  | 138.42d → 154d | baseline start none → 2006-03-28; baseline finish none → 2006-06-05 |
| 6 | **Requirements Gathering** |  |  |  | 138.42d → 154d | baseline start none → 2006-03-28; baseline finish none → 2006-06-05 |
| 7 | Determine General Requirements |  |  |  |  | baseline start none → 2006-03-28; baseline finish none → 2006-03-28 |
| 8 | Determine Basic Use Cases |  |  |  |  | baseline start none → 2006-03-29; baseline finish none → 2006-03-29 |
| 9 | Prioritize Use Cases |  |  |  |  | baseline start none → 2006-03-30; baseline finish none → 2006-03-30 |
| 10 | Milestone: General Requirements Captured |  |  |  |  | baseline start none → 2006-03-31; baseline finish none → 2006-03-31 |
| 11 | **Documentation** |  |  |  | 138.42d → 154d | baseline start none → 2006-04-05; baseline finish none → 2006-06-05 |
| 12 | Draft Project Plan |  |  |  |  | baseline start none → 2006-04-05; baseline finish none → 2006-04-06 |
| 13 | Add Feature Requests/Bugs into TestTrack |  |  |  | 154.24d → 146d | baseline start none → 2006-05-10; baseline finish none → 2006-05-11 |
| 14 | Draft Requirements Specification Document |  |  |  |  | baseline start none → 2006-05-12; baseline finish none → 2006-05-16 |
| 15 | Draft Design Document |  |  |  | 148.42d → 139d | baseline start none → 2006-05-17; baseline finish none → 2006-05-22 |
| 16 | Draft Test Plan |  |  |  | 137.24d → 116d | baseline start none → 2006-05-17; baseline finish none → 2006-05-22 |
| 17 | Draft Test Cases |  |  |  | 137.24d → 129d | baseline start none → 2006-05-23; baseline finish none → 2006-06-05 |
| 18 | **Data Update Cycle** |  |  |  | 156.42d → 172d | baseline start none → 2006-05-10; baseline finish none → 2006-05-10 |
| 19 | Data Refresh 1 |  |  |  | 155.24d → 147d | baseline start none → 2006-05-10; baseline finish none → 2006-05-10 |
| 20 | Data Refresh 2 |  |  |  | 155.24d → 147d | baseline start none → 2006-05-10; baseline finish none → 2006-05-10 |
| 21 | **Evolution Cycle (June release) : Elaboration & Construction** |  |  |  | 0d → 37.82d | baseline start none → 2006-04-21; baseline finish none → 2006-06-19 |
| 22 | **Iteration 1** |  |  |  |  | baseline start none → 2006-04-21; baseline finish none → 2006-05-31 |
| 23 | **ID Mapper Functionality** |  |  |  |  | baseline start none → 2006-05-10; baseline finish none → 2006-05-24 |
| 24 | Create ID Mapping Service |  |  |  |  | baseline start none → 2006-05-11; baseline finish none → 2006-05-17 |
| 25 | Define ID Mapping File Format and create sample |  |  |  |  | baseline start none → 2006-05-10; baseline finish none → 2006-05-10 |
| 26 | Create ID Mapping Data File |  |  |  |  | baseline start none → 2006-05-11; baseline finish none → 2006-05-12 |
| 27 | Create ID Mapping GUI wireframe |  |  |  |  | baseline start none → 2006-05-10; baseline finish none → 2006-05-11 |
| 28 | Create ID Mapping UI |  |  |  |  | baseline start none → 2006-05-18; baseline finish none → 2006-05-24 |
| 29 | **User List Management Functionality** |  |  |  |  | baseline start none → 2006-05-10; baseline finish none → 2006-05-30 |
| 30 | Create wireframes for list management GUI |  |  |  |  | baseline start none → 2006-05-10; baseline finish none → 2006-05-12 |
| 31 | Implement List Management GUI |  |  |  |  | baseline start none → 2006-05-15; baseline finish none → 2006-05-30 |
| 32 | Integrate List management into the application |  |  |  |  | baseline start none → 2006-05-18; baseline finish none → 2006-05-22 |
| 33 | **Incorporate CDNA in High Order Analysis** |  |  |  |  | baseline start none → 2006-04-21; baseline finish none → 2006-05-31 |
| 34 | create sample CDNA R data file |  |  |  |  | baseline start none → 2006-04-21; baseline finish none → 2006-04-21 |
| 35 | QA CDNA data |  |  |  |  | baseline start none → 2006-05-10; baseline finish none → 2006-05-16 |
| 36 | Develop SOP for CDNA data normalization |  |  |  |  | baseline start none → 2006-05-10; baseline finish none → 2006-05-11 |
| 37 | Normalize CDNA samples |  |  |  |  | baseline start none → 2006-05-17; baseline finish none → 2006-05-30 |
| 38 | Create Final CDNA R data file |  |  |  |  | baseline start none → 2006-05-31; baseline finish none → 2006-05-31 |
| 39 | Create CDNA annotation file |  |  |  |  | baseline start none → 2006-05-10; baseline finish none → 2006-05-12 |
| 40 | **Test** |  |  |  |  | baseline start none → 2006-05-10; baseline finish none → 2006-05-16 |
| 41 | Unit Test |  |  |  |  | baseline start none → 2006-05-10; baseline finish none → 2006-05-15 |
| 42 | Integration Test (Dev) |  |  |  |  | baseline start none → 2006-05-16; baseline finish none → 2006-05-16 |
| 43 | Milestone: Test Fixes on Dev |  |  |  |  | baseline start none → 2006-05-17; baseline finish none → 2006-05-17 |
| 44 | **Iteration 2** |  |  |  | 6.6d → 44.42d | baseline start none → 2006-05-03; baseline finish none → 2006-06-02 |
| 45 | **Clinical Data modification** |  |  |  |  | baseline start none → 2006-05-03; baseline finish none → 2006-05-08 |
| 46 | Update clinical data file with new columns |  |  |  |  | baseline start none → 2006-05-03; baseline finish none → 2006-05-04 |
| 47 | Modify clinical data parser to support new columns |  |  |  |  | baseline start none → 2006-05-05; baseline finish none → 2006-05-05 |
| 48 | Modify clinical report (PCA and HC) to handle new columns |  |  |  |  | baseline start none → 2006-05-08; baseline finish none → 2006-05-08 |
| 49 | **General Tasks** |  |  |  |  | baseline start none → 2006-05-10; baseline finish none → 2006-05-25 |
| 50 | Externalize data files |  |  |  |  | baseline start none → 2006-05-23; baseline finish none → 2006-05-23 |
| 51 | Externalize Properties |  |  |  |  | baseline start none → 2006-05-10; baseline finish none → 2006-05-25 |
| 52 | **Test** |  |  |  |  | baseline start none → 2006-05-25; baseline finish none → 2006-06-01 |
| 53 | Unit Test |  |  |  |  | baseline start none → 2006-05-25; baseline finish none → 2006-05-31 |
| 54 | Integration Test (Dev) |  |  |  |  | baseline start none → 2006-05-31; baseline finish none → 2006-06-01 |
| 55 | Milestone: Test Fixes on Dev |  |  |  |  | baseline start none → 2006-06-01; baseline finish none → 2006-06-01 |
| 56 | Update design spec. |  |  |  |  | baseline start none → 2006-06-01; baseline finish none → 2006-06-02 |
| 57 | **Transition** |  |  |  | 0d → 37.82d | baseline start none → 2006-06-05; baseline finish none → 2006-06-19 |
| 58 | **Testing and Deployment** |  |  |  | 8d → 45.82d | baseline start none → 2006-06-05; baseline finish none → 2006-06-07 |
| 59 | Modify deployment scripts |  |  |  |  | baseline start none → 2006-06-05; baseline finish none → 2006-06-05 |
| 60 | Testing |  |  |  |  | baseline start none → 2006-06-06; baseline finish none → 2006-06-07 |
| 61 | **Deployment** |  |  |  | 0d → 37.82d | baseline start none → 2006-06-05; baseline finish none → 2006-06-19 |
| 62 | Deployment to QA |  |  |  |  | baseline start none → 2006-06-05; baseline finish none → 2006-06-05 |
| 63 | QA Testing |  |  |  | 0d → 23.65d | baseline start none → 2006-06-06; baseline finish none → 2006-06-12 |
| 64 | Deployment to Staging |  |  |  | 0d → 23.65d | baseline start none → 2006-06-13; baseline finish none → 2006-06-14 |
| 65 | Staging Testing |  |  |  | 0d → 23.65d | baseline start none → 2006-06-15; baseline finish none → 2006-06-19 |
| 66 | **Evolution Cycle (1.0 Release Elaboration & Construction)** | 2006-12-15 → 2007-01-05 (+21d) | 128.42d → 144d? | 14% → 28% |  | baseline start none → 2006-06-20; baseline finish none → 2007-01-15 |
| 67 | Draft Project Plan |  |  |  |  | baseline start none → 2006-06-20; baseline finish none → 2006-07-04 |
| 68 | **Iteration 1 - Use cases and Documentation** | 2006-08-14 → 2006-08-30 A (+16d) | 39.75d → 52d | 72% → 100% | 0d → none | baseline start none → 2006-06-20; baseline finish none → 2006-08-30 |
| 69 | **Requirements Gathering** | 2006-07-17 A |  | 92% → 100% | 20.75d → none | baseline start none → 2006-06-20; baseline finish none → 2006-07-17 |
| 70 | Determine General Requirements |  |  |  |  | baseline start none → 2006-06-20; baseline finish none → 2006-06-23 |

| ID | Task | Start | Finish | Duration | Complete | Total float | Predecessors | Other |
| --- | --- | --- | --- | --- | --- | --- | --- | --- |
| 71 | Draft Wireframes |  | 2006-06-30 A |  | 75% → 100% | 30.75d → none |  | baseline start none → 2006-06-27; baseline finish none → 2006-06-30 |
| 72 | Determine Basic Use Cases |  |  |  |  |  |  | baseline start none → 2006-07-03; baseline finish none → 2006-07-04 |
| 73 | MileStone: Completed Requirements specification |  |  |  |  |  |  | baseline start none → 2006-06-30; baseline finish none → 2006-06-30 |
| 74 | Determine backend data needs. |  |  |  |  |  |  | baseline start none → 2006-07-13; baseline finish none → 2006-07-17 |
| 75 | **Documentation** |  | 2006-08-03 → 2006-08-30 A (+27d) | 23.75d → 43d | 33% → 100% | 7d → none |  | baseline start none → 2006-07-03; baseline finish none → 2006-08-30 |
| 76 | Draft Scope Document |  |  |  |  |  |  | baseline start none → 2006-07-03; baseline finish none → 2006-07-05 |
| 77 | Draft Usecase documents |  | 2006-07-17 → 2006-08-07 A (+21d) |  | 75% → 100% | 0d → none |  | baseline start none → 2006-07-12; baseline finish none → 2006-08-07 |
| 78 | Draft Design Document | 2006-07-24 → 2006-08-14 A (+21d) | 2006-08-03 → 2006-08-30 A (+27d) | 8d → 13d | 0% → 100% | 0d → none |  | baseline start none → 2006-08-14; baseline finish none → 2006-08-30 |
| 79 | Milestone: Completed Design document | 2006-08-03 → 2006-08-30 A (+27d) | 2006-08-03 → 2006-08-30 A (+27d) |  | 0% → 100% | 7d → none |  | baseline start none → 2006-08-30; baseline finish none → 2006-08-30 |
| 80 | Define Interfaces for front to middle tier communication |  |  |  |  |  |  | baseline start none → 2006-07-10; baseline finish none → 2006-07-17 |
| 81 | **Implement Clinical Query GUI using file based service** |  | 2006-08-14 A |  | 88% → 100% | 0d → none |  | baseline start none → 2006-08-03; baseline finish none → 2006-08-14 |
| 82 | Modify file based clinical service to support GUI development | 2006-08-03 → 2006-08-04 A (+1d) | 2006-08-04 → 2006-08-07 A (+3d) |  | 0% → 100% | 6d → none |  | baseline start none → 2006-08-04; baseline finish none → 2006-08-07 |
| 83 | Implement Clinical Query GUI and report |  |  |  |  |  |  | baseline start none → 2006-08-03; baseline finish none → 2006-08-14 |
| 84 | **Iteration 2 - Integration with NCIA** | 2006-08-14 → 2006-08-30 A (+16d) | 2006-09-27 → 2006-10-26 (+29d) | 32d → 41d | 0% → 14% |  |  | was named Iteration 2a - Integration with NCIA; baseline start none → 2006-08-30; baseline finish none → 2006-10-13 |
| 85 | **Requirements Gathering** | 2006-08-14 → 2006-08-31 A (+17d) | 2006-08-23 → 2006-09-08 A (+16d) |  | 0% → 100% | 0d → none |  | baseline start none → 2006-08-31; baseline finish none → 2006-09-08 |
| 86 | Determine General Requirements | 2006-08-14 → 2006-08-31 A (+17d) | 2006-08-17 → 2006-09-04 A (+18d) |  | 0% → 100% | 0d → none |  | resources GeorgeDa [30%] → HarrisMA [30%]; baseline start none → 2006-08-31; baseline finish none → 2006-09-04 |
| 87 | Determine use of CSM / LDAP | 2006-08-17 → 2006-09-05 A (+19d) | 2006-08-18 → 2006-09-05 A (+18d) |  | 0% → 100% | 0d → none |  | resources GeorgeDa [30%] → MujuS; baseline start none → 2006-09-05; baseline finish none → 2006-09-05 |
| 88 | Determine Basic Use Cases | 2006-08-18 → 2006-09-06 A (+19d) | 2006-08-23 → 2006-09-08 A (+16d) |  | 0% → 100% | 0d → none |  | resources GeorgeDa [30%] → HarrisM [30%]; baseline start none → 2006-09-06; baseline finish none → 2006-09-08 |
| 89 | MileStone: Completed Requirements specification | 2006-08-23 → 2006-09-08 A (+16d) | 2006-08-23 → 2006-09-08 A (+16d) |  | 0% → 100% | 0d → none |  | baseline start none → 2006-09-08; baseline finish none → 2006-09-08 |
| 90 | **Design** | 2006-08-23 → 2006-09-11 (+19d) | 2006-08-30 → 2006-09-15 (+16d) |  |  | 0d → 29d |  | baseline start none → 2006-09-11; baseline finish none → 2006-09-15 |
| 91 | Design method for mapping ids from ISPY to NCIA | 2006-08-23 → 2006-09-11 (+19d) | 2006-08-30 → 2006-09-15 (+16d) |  |  | 0d → 22d |  | resources GeorgeDa [30%] → HarrisM [30%]; baseline start none → 2006-09-11; baseline finish none → 2006-09-15 |
| 92 | Design method to display text annotation along with images | 2006-08-23 → 2006-09-11 (+19d) | 2006-08-25 → 2006-09-13 (+19d) | 2d → 2.6d |  | 3d → 2.4d |  | resources GeorgeDa [30%]; RossoK → RossoK; baseline start none → 2006-09-11; baseline finish none → 2006-09-12 |
| 93 | **Data Submission to NCIA system** | 2006-08-14 → 2006-08-30 A (+16d) | 2006-08-30 → 2006-09-15 A (+16d) |  | 0% → 100% | 0d → none |  | baseline start none → 2006-08-30; baseline finish none → 2006-09-15 |
| 94 | Milestone: receive ISPY image data | 2006-08-30 → 2006-09-15 A (+16d) | 2006-08-30 → 2006-09-15 A (+16d) |  | 0% → 100% | 0d → none |  | baseline start none → 2006-09-15; baseline finish none → 2006-09-15 |
| 95 | Milestone: Images available in the NCIA system | 2006-08-14 → 2006-08-30 A (+16d) | 2006-08-14 → 2006-08-30 A (+16d) |  | 0% → 100% | 12d → none |  | baseline start none → 2006-08-30; baseline finish none → 2006-08-30 |
| 96 | **Implementation** | 2006-08-30 → 2006-09-15 (+16d) | 2006-09-07 → 2006-09-20 (+13d) | 6d → 3d |  |  |  | baseline start none → 2006-09-15; baseline finish none → 2006-09-25 |
| 97 | Implement deep links into NCIA system modifying the clinical report | 2006-09-04 → 2006-09-18 (+14d) | 2006-09-07 → 2006-09-20 (+13d) |  |  |  | Milestone: NICA system has linkin capability, 98 → none | resources GeorgeDa; RossoK → RossoK; baseline start none → 2006-09-15; baseline finish none → 2006-09-15 |
| 98 | Implement CSM/LDAP authentication | 2006-08-30 → 2006-09-18 (+19d) | 2006-09-04 → 2006-09-20 (+16d) |  |  |  |  | resources GeorgeDa → MujuS; baseline start none → 2006-09-18; baseline finish none → 2006-09-20 |
| 99 | Milestone: Completed Design document | 2006-08-30 → 2006-09-15 (+16d) | 2006-08-30 → 2006-09-15 (+16d) |  |  | 6d → 3d |  | baseline start none → 2006-09-15; baseline finish none → 2006-09-15 |
| 100 | **Test** | 2006-09-07 → 2006-09-21 (+14d) | 2006-09-27 → 2006-10-10 (+13d) |  |  |  |  | baseline start none → 2006-09-26; baseline finish none → 2006-10-13 |
| 101 | Unit Test | 2006-09-07 → 2006-09-21 (+14d) | 2006-09-13 → 2006-09-26 (+13d) |  |  |  |  | baseline start none → 2006-09-26; baseline finish none → 2006-09-29 |
| 102 | Integration Test (Dev) | 2006-09-13 → 2006-09-27 (+14d) | 2006-09-27 → 2006-10-10 (+13d) |  |  |  |  | baseline start none → 2006-10-02; baseline finish none → 2006-10-13 |
| 103 | Milestone: Test Fixes on Dev | 2006-09-27 → 2006-10-10 (+13d) | 2006-09-27 → 2006-10-10 (+13d) |  |  |  |  | baseline start none → 2006-10-13; baseline finish none → 2006-10-13 |
| 110 | **Iteration 3 - Data Analysis Functionality & Visualization** | 2006-06-20 → 2006-07-05 A (+15d) | 2006-07-11 → 2006-11-30 (+142d) | 16d → 107d? | 0% → 30% | 112.42d → 26d |  | was named Iteration 2b - Prototype design & implementation of the Integrated Data displays; baseline start none → 2006-06-20; baseline finish none → 2006-07-11 |
| 111 | **Correlation Displays** | 2006-06-20 → 2006-07-05 A (+15d) | 2006-07-11 → 2006-10-31 (+112d) | 16d → 85d? | 0% → 72% | 112.42d → 43d |  | baseline start none → 2006-06-20; baseline finish none → 2006-07-11 |
| 112 | Create correlation display storyboard | 2006-07-05 A | 2006-07-11 A |  | 0% → 100% | 111.24d → none | 76 → none | was named Design/Prototype of analyis server enhancement to support correlation; baseline start none → 2006-07-05; baseline finish none → 2006-07-11 |
| 115 | Implement Scatter Plots with correlation specific features | 2006-06-20 → 2006-08-09 A (+50d) | 2006-07-10 → 2006-09-08 A (+60d) | 3w → 10d | 0% → 100% | 112.24d → none |  | was named GUI display of correlation; baseline start none → 2006-06-20; baseline finish none → 2006-07-10 |
| 117 | Analyis server enhancement to support correlation | 2006-11-02 → 2006-10-27 (-6d) | 2006-11-07 → 2006-10-31 (-7d) |  |  | 13.67d → 43d | none → 109 | baseline start none → 2006-12-04; baseline finish none → 2006-12-06 |
| 125 | **Test** | 2006-11-27 → 2006-11-03 (-24d) | 2006-12-08 → 2006-11-30 (-8d) | 9d → 20d |  | 0d → 26d | Correlation Displays → 122 | baseline start none → 2006-12-26; baseline finish none → 2007-01-08 |
| 126 | Unit Test | 2006-11-27 → 2006-11-03 (-24d) | 2006-12-01 → 2006-11-08 (-23d) |  |  | 0d → 26d |  | baseline start none → 2006-12-26; baseline finish none → 2007-01-01 |
| 127 | Integration Test (Dev) | 2006-12-01 → 2006-11-09 (-22d) | 2006-12-08 → 2006-11-30 (-8d) | 5d → 16d |  | 0d → 26d |  | baseline start none → 2007-01-01; baseline finish none → 2007-01-08 |
| 128 | Milestone: Test Fixes on Dev | 2006-11-27 → 2006-11-30 (+3d) | 2006-11-27 → 2006-11-30 (+3d) |  |  | 9d → 26d | none → 127 | baseline start none → 2006-12-26; baseline finish none → 2006-12-26 |
| 129 | **Iteration 4 - Individual Data Type Query and Retrieval** | 2006-09-27 → 2006-10-26 (+29d) | 2006-11-02 → 2007-01-05 (+64d) | 26d → 51d |  |  |  | was named Iteration 3 - Individual Data Type Query and Retrieval; baseline start none → 2006-10-13; baseline finish none → 2006-12-01 |
| 130 | **Refactor App from Evolution Cycle (June release) to use new backend** | 2006-09-27 → 2006-10-27 (+30d) | 2006-10-11 → 2006-11-09 (+29d) |  |  | 16d → 41d |  | baseline start none → 2006-10-16; baseline finish none → 2006-10-27 |
| 131 | Convert file based annotation to use db | 2006-09-27 → 2006-10-27 (+30d) | 2006-10-03 → 2006-11-01 (+29d) |  |  | 16d → 41d |  | resources GeorgeDa → ZhangD; baseline start none → 2006-10-16; baseline finish none → 2006-10-19 |
| 132 | Convert ID lookup to use db | 2006-10-03 → 2006-11-02 (+30d) | 2006-10-06 → 2006-11-06 (+31d) |  |  | 16d → 41d |  | resources GeorgeDa → ZhangD; baseline start none → 2006-10-20; baseline finish none → 2006-10-24 |
| 133 | Convert clinical file based calls to use clinical object model | 2006-10-06 → 2006-11-07 (+32d) | 2006-10-11 → 2006-11-09 (+29d) |  |  | 16d → 41d |  | resources GeorgeDa → ZhangD; baseline start none → 2006-10-25; baseline finish none → 2006-10-27 |
| 134 | **Implement ID lookup in database** | 2006-09-27 → 2006-10-27 (+30d) | 2006-10-04 → 2006-11-02 (+29d) |  |  | 21d → 46d |  | baseline start none → 2006-10-16; baseline finish none → 2006-10-20 |
| 135 | populate tables | 2006-09-27 → 2006-10-27 (+30d) | 2006-09-29 → 2006-10-30 (+31d) |  |  | 21d → 46d |  | baseline start none → 2006-10-16; baseline finish none → 2006-10-17 |
| 136 | develop middle tier and backend code | 2006-09-29 → 2006-10-31 (+32d) | 2006-10-04 → 2006-11-02 (+29d) |  |  | 21d → 46d |  | baseline start none → 2006-10-18; baseline finish none → 2006-10-20 |
| 137 | **Implement Clinical Query Functionality** | 2006-09-27 → 2006-10-26 (+29d) | 2006-10-03 → 2006-11-01 (+29d) |  |  |  |  | baseline start none → 2006-10-13; baseline finish none → 2006-10-19 |
| 138 | CG - Model with I-SPY Finding Pkgs |  |  |  |  |  |  | baseline start none → 2006-06-27; baseline finish none → 2006-07-18 |
| 139 | Milestone: Clinical Object Model Supports Clinical Queries | 2006-09-27 → 2006-10-26 (+29d) | 2006-09-27 → 2006-10-26 (+29d) |  |  |  |  | baseline start none → 2006-10-13; baseline finish none → 2006-10-13 |
| 140 | Implement Middle Tier code to support Clinical Queries | 2006-09-27 → 2006-10-27 (+30d) | 2006-10-03 → 2006-11-01 (+29d) |  |  |  |  | resources GeorgeDa [50%] → GeorgeDa [50%]; ZhangD [50%]; baseline start none → 2006-10-16; baseline finish none → 2006-10-19 |
| 141 | Populate Clinical Database tables | 2006-09-27 → 2006-10-27 (+30d) | 2006-09-29 → 2006-10-30 (+31d) |  |  |  |  | baseline start none → 2006-10-16; baseline finish none → 2006-10-17 |
| 142 | **Implement FISH Query Functionality** | 2006-10-03 → 2006-11-01 (+29d) | 2006-10-19 → 2006-11-08 (+20d) | 12d → 5d |  |  |  | baseline start none → 2006-10-19; baseline finish none → 2006-10-26 |
| 143 | Implement FISH Query GUI | 2006-10-03 → 2006-11-02 (+30d) | 2006-10-19 → 2006-11-08 (+20d) |  |  |  |  | baseline start none → 2006-10-20; baseline finish none → 2006-10-26 |
| 144 | Implement Middle Tier code to support FISH |  |  |  |  |  |  | baseline start none → 2006-09-21; baseline finish none → 2006-10-03 |
| 145 | MileStone: Middle-tier for FISH completed | 2006-10-03 → 2006-11-01 (+29d) | 2006-10-03 → 2006-11-01 (+29d) |  |  |  |  | baseline start none → 2006-10-19; baseline finish none → 2006-10-19 |
| 146 | Port existing data portal FISH functionality | 2006-10-03 → 2006-11-02 (+30d) | 2006-10-18 → 2006-11-07 (+20d) |  |  |  |  | baseline start none → 2006-10-20; baseline finish none → 2006-10-25 |
| 147 | Populate FISH Database tables | 2006-10-03 → 2006-11-02 (+30d) | 2006-10-05 → 2006-11-03 (+29d) |  |  | 10d → 3d |  | resources JiangHo → ZhangD; baseline start none → 2006-10-20; baseline finish none → 2006-10-23 |
| 148 | **Implement IHC Query Functionality** | 2006-10-03 → 2006-11-01 (+29d) | 2006-10-13 → 2006-11-08 (+26d) | 7.82d → 5d |  | 4.18d → 5d |  | baseline start none → 2006-10-19; baseline finish none → 2006-10-26 |
| 149 | Implement IHC Query GUI | 2006-10-03 → 2006-11-02 (+30d) | 2006-10-10 → 2006-11-08 (+29d) |  |  | 7d → 5d |  | baseline start none → 2006-10-20; baseline finish none → 2006-10-26 |
| 150 | Implement Middle Tier Code to support IHC |  |  |  |  |  |  | baseline start none → 2006-10-03; baseline finish none → 2006-10-13 |
| 151 | MileStone: Middle-tier for IHC completed | 2006-10-13 → 2006-11-01 (+19d) | 2006-10-13 → 2006-11-01 (+19d) |  |  | 3d → 10d |  | baseline start none → 2006-10-19; baseline finish none → 2006-10-19 |
| 152 | Port existing data portal IHC functionality | 2006-10-03 → 2006-11-02 (+30d) | 2006-10-09 → 2006-11-07 (+29d) |  |  | 8d → 6d |  | baseline start none → 2006-10-20; baseline finish none → 2006-10-25 |
| 153 | Populate IHC Database tables | 2006-10-03 → 2006-11-02 (+30d) | 2006-10-05 → 2006-11-03 (+29d) |  |  | 10d → 8d |  | baseline start none → 2006-10-20; baseline finish none → 2006-10-23 |
| 154 | **Implement P53 Query Functionality** | 2006-10-19 → 2006-11-08 (+20d) | 2006-10-26 → 2006-11-15 (+20d) |  |  |  |  | baseline start none → 2006-10-26; baseline finish none → 2006-11-02 |
| 155 | Implement P53 Query GUI | 2006-10-19 → 2006-11-09 (+21d) | 2006-10-26 → 2006-11-15 (+20d) |  |  |  |  | baseline start none → 2006-10-27; baseline finish none → 2006-11-02 |
| 156 | Implement Middle Tier Code to support P53 |  |  |  |  |  |  | baseline start none → 2006-10-13; baseline finish none → 2006-10-19 |

| ID | Task | Start | Finish | Duration | Total float | Predecessors | Other |
| --- | --- | --- | --- | --- | --- | --- | --- |
| 157 | MileStone: Middle-tier for P53 completed | 2006-10-19 → 2006-11-08 (+20d) | 2006-10-19 → 2006-11-08 (+20d) |  |  |  | baseline start none → 2006-10-26; baseline finish none → 2006-10-26 |
| 158 | Port existing data portal P53 functionality | 2006-10-19 → 2006-11-09 (+21d) | 2006-10-25 → 2006-11-14 (+20d) |  |  |  | baseline start none → 2006-10-27; baseline finish none → 2006-11-01 |
| 159 | Populate P53 Database tables | 2006-10-19 → 2006-11-09 (+21d) | 2006-10-23 → 2006-11-10 (+18d) |  |  |  | baseline start none → 2006-10-27; baseline finish none → 2006-10-30 |
| 160 | **Test** | 2006-10-20 → 2006-10-27 (+7d) | 2006-11-02 → 2006-12-14 (+42d) | 9.18d → 35d |  | Implement Gene Expression Query Functionality → none | baseline start none → 2006-11-03; baseline finish none → 2006-12-01 |
| 161 | Unit Test | 2006-10-20 → 2006-10-27 (+7d) | 2006-10-26 → 2006-11-01 (+6d) |  | 4d → 31d |  | baseline start none → 2006-11-03; baseline finish none → 2006-11-08 |
| 162 | Integration Test (Dev) | 2006-10-26 → 2006-11-16 (+21d) | 2006-11-02 → 2006-12-14 (+42d) | 5d → 21d |  | 137, 142, 148, 154, Implement Gene Expression Query Functionality → 137, 142, 148, 154 | baseline start none → 2006-11-03; baseline finish none → 2006-12-01 |
| 163 | Milestone: Test Fixes on Dev | 2006-11-02 → 2006-12-14 (+42d) | 2006-11-02 → 2006-12-14 (+42d) |  |  |  | baseline start none → 2006-12-01; baseline finish none → 2006-12-01 |
| 164 | **Transition** | 2006-12-08 → 2006-12-15 (+7d) | 2006-12-15 → 2007-01-05 (+21d) | 5d → 16d |  | 125 → 160 | baseline start none → 2007-01-08; baseline finish none → 2007-01-15 |
| 165 | Modify deployment scripts | 2006-12-08 → 2006-12-15 (+7d) | 2006-12-11 → 2006-12-15 (+4d) |  | 4d → 0d |  | baseline start none → 2007-01-08; baseline finish none → 2007-01-09 |
| 166 | Deployment to QA | 2006-12-08 → 2006-12-18 (+10d) | 2006-12-11 → 2006-12-18 (+7d) |  | 4d → 0d | none → 165 | baseline start none → 2007-01-08; baseline finish none → 2007-01-09 |
| 167 | Testing on QA | 2006-12-08 → 2006-12-19 (+11d) | 2006-12-15 → 2006-12-25 (+10d) |  |  | none → 166 | baseline start none → 2007-01-08; baseline finish none → 2007-01-15 |
| 168 | Deployment to Staging | 2006-12-08 → 2006-12-26 (+18d) | 2006-12-12 → 2006-12-27 (+15d) |  | 3d → 0d | none → 167 | baseline start none → 2007-01-08; baseline finish none → 2007-01-10 |
| 169 | Testing on Staging | 2006-12-08 → 2006-12-28 (+20d) | 2006-12-13 → 2007-01-01 (+19d) |  | 2d → 0d | none → 168 | baseline start none → 2007-01-08; baseline finish none → 2007-01-11 |
| 170 | Deployment to Production | 2006-12-08 → 2007-01-02 (+25d) | 2006-12-12 → 2007-01-03 (+22d) |  | 3d → 0d | none → 169 | baseline start none → 2007-01-08; baseline finish none → 2007-01-10 |
| 171 | Testing on Production | 2006-12-08 → 2007-01-04 (+27d) | 2006-12-12 → 2007-01-05 (+24d) |  | 3d → 0d | none → 170 | baseline start none → 2007-01-08; baseline finish none → 2007-01-10 |
