# Rembrandt1.5Schedule_04-26-2006

How a schedule from MS Project changed from version to version. A marks actual dates.

## Version 1 (saved 2006-07-10)

Note of the change: initial revision

| ID | WBS | Task | Duration | Start | Finish | Predecessors | Complete | Total float | Constraint |
| --- | --- | --- | --- | --- | --- | --- | --- | --- | --- |
| 1 | 1 | **Rembrandt 1.5 Release** | 112d | 2006-06-05 A | 2006-11-07 |  | 4% | 0d |  |
| 2 | 1.1 | **Rembrandt 1.5 Bug Fixes/ Feature Enchacements** | 112d | 2006-06-05 A | 2006-11-07 |  | 4% | 0d |  |
| 3 | 1.1.1 | **Project Management and Control** | 80d | 2006-06-07 | 2006-09-26 |  |  | 30d |  |
| 4 |  | Project Management | 80d | 2006-06-07 | 2006-09-26 |  |  | 30d | start no earlier than 2006-06-07 |
| 5 |  | Project Control | 80d | 2006-06-07 | 2006-09-26 |  |  | 30d | start no earlier than 2006-06-07 |
| 6 | 1.1.2 | **Inception Phase** | 24d | 2006-06-05 A | 2006-07-06 |  | 3% | 88d |  |
| 7 | 1.1.2.1 | **Requirements Gathering** | 5d | 2006-06-07 A | 2006-06-13 |  | 18% | 0d |  |
| 8 |  | Determine General Requirements | 1d | 2006-06-07 | 2006-06-07 |  |  | 0.9d | start no earlier than 2006-06-07 |
| 9 |  | Determine Basic Use Cases | 3d | 2006-06-08 | 2006-06-12 | 8 |  | 0.9d | start no earlier than 2006-06-07 |
| 10 |  | Prioritize Use Cases | 1d | 2006-06-13 A | 2006-06-13 | 8, 9 | 90% | 0d | start no earlier than 2006-06-05 |
| 11 | 1.1.2.2 | **Documentation** | 24d | 2006-06-05 A | 2006-07-06 |  |  | 88d |  |
| 12 |  | Draft Project Plan | 5d | 2006-06-05 | 2006-06-09 |  |  | 107d | start no earlier than 2006-06-05 |
| 13 |  | Add Feature Requests/Bugs into TestTrack | 2d | 2006-06-05 A | 2006-06-06 |  |  | 5d | start no earlier than 2006-06-05 |
| 14 |  | Draft Requirements Specification Document | 3d | 2006-06-14 | 2006-06-16 | 10, 13 |  | 0d |  |
| 15 |  | Draft Design Document | 4d | 2006-06-19 | 2006-06-22 | 14 |  | 98d |  |
| 16 |  | Draft Test Plan | 4d | 2006-06-19 | 2006-06-22 | 14 |  | 88d |  |
| 17 |  | Draft Test Cases | 10d | 2006-06-23 | 2006-07-06 | 16 |  | 88d |  |
| 18 |  | Milestone: General Requirements Captured & Priortized | 0d | 2006-06-16 | 2006-06-16 | 14 |  | 102d |  |
| 19 | 1.1.3 | **Elaboration Phase** | 102d | 2006-06-19 A | 2006-11-07 |  | 8% | 0d |  |
| 20 | 1.1.3.1 | **Itreration 1 (Bug Fixes)** | 25d | 2006-06-19 A | 2006-07-21 | 14 | 33% | 2d |  |
| 21 | 1.1.3.1.1 | **design** | 4d | 2006-06-19 | 2006-06-22 |  |  | 2d |  |
| 22 |  | List Management | 2d | 2006-06-19 | 2006-06-20 |  |  | 2d |  |
| 23 |  | Add option to download data in BRB tool format | 4d | 2006-06-19 | 2006-06-22 |  |  | 21d |  |
| 24 | 1.1.3.1.2 | **Code** | 16d | 2006-06-19 A | 2006-07-10 |  | 51% | 2d |  |
| 25 |  | Fix bug associated with Advance Option | 3d | 2006-06-21 | 2006-06-23 | 22 |  | 2d | start no earlier than 2005-05-16 |
| 26 |  | Allow multiple disease selection for advanced queries | 3d | 2006-06-26 A | 2006-06-28 | 25 | 80% | 10d |  |
| 27 |  | Look into save queries as they do not seem to be saving properly | 2d | 2006-06-19 A | 2006-06-20 A |  | 100% |  | start no earlier than 2005-04-18 |
| 28 |  | Refactor cache to use the caIntegrator commons cache | 2d | 2006-06-21 A | 2006-06-22 A | 27 | 100% |  |  |
| 29 |  | Refactor Analysis server client manager | 3d | 2006-06-23 A | 2006-06-27 A | 28 | 100% |  |  |
| 30 |  | Investigate sample upload using JC’s file | 1d | 2006-06-19 A | 2006-06-19 A |  | 100% |  | start no earlier than 2006-04-10 |
| 31 |  | Change Search Pathway to caBIO v3.1 | 5d | 2006-06-19 A | 2006-06-23 A |  | 100% |  | start no earlier than 2005-05-16 |
| 32 |  | Abstracting common code UI to app. Commons module | 3d | 2006-06-26 | 2006-06-28 | 25 |  | 2d |  |
| 33 |  | List Management Implementation | 8d | 2006-06-29 | 2006-07-10 | 32 |  | 2d | start no earlier than 2005-05-23 |
| 34 |  | Deployment to Dev | 0d | 2006-07-10 | 2006-07-10 | 24 |  | 11d |  |
| 35 | 1.1.3.1.4 | **Test** | 8d | 2006-07-11 | 2006-07-20 |  |  | 2d |  |
| 36 |  | Unit Test | 3d | 2006-07-11 | 2006-07-13 | 24 |  | 2d |  |
| 37 |  | Integration Test (Dev) | 5d | 2006-07-14 | 2006-07-20 | 36 |  | 2d |  |
| 38 |  | Milestone: Test Build on Dev Completed | 0d | 2006-07-20 | 2006-07-20 | 37 |  | 3d |  |
| 39 | 1.1.3.1.6 | **MileStone Draft Documents:** | 1d | 2006-07-20 | 2006-07-21 | 37 |  | 2d |  |
| 40 |  | Draft Iteration 1 Design Doc Completed | 0d | 2006-07-20 | 2006-07-20 |  |  | 3d |  |
| 41 |  | Draft Iteration 1 Test Cases Completed | 1d | 2006-07-21 | 2006-07-21 |  |  | 2d |  |
| 42 |  | Draft Test Plan Completed | 1d | 2006-07-21 | 2006-07-21 |  |  | 2d |  |
| 43 | 1.1.3.2 | **Itreration 2 (Enchanced Functionality)** | 27d | 2006-07-24 A | 2006-08-29 | 20 | 2% | 0d |  |
| 44 | 1.1.3.2.1 | **code** | 16d | 2006-07-24 A | 2006-08-14 |  | 3% | 0d |  |
| 45 | 1.1.3.2.1.1 | **Advanced Search/Reports** | 14d | 2006-07-24 | 2006-08-10 |  |  | 2d |  |
| 46 |  | Allow persistence of complex queries | 1w | 2006-07-24 | 2006-07-28 |  |  | 11d |  |
| 47 |  | Allow users to save samples where one or more rows are highlighted. | 6d | 2006-07-24 | 2006-07-31 | 37 |  | 2d |  |
| 48 |  | “Check All” should select All items on All pages, not just the current page | 5d | 2006-08-01 | 2006-08-07 | 47 |  | 2d |  |
| 49 |  | when viewing copy number report, add button toggle that lets user see the clinical report of the data | 3d | 2006-08-08 | 2006-08-10 | 48 |  | 2d |  |
| 50 |  | Bug Fix: filter for p-value on the result page | 1d | 2006-07-24 | 2006-07-24 | 33 |  | 15d |  |
| 51 | 1.1.3.2.1.2 | **HOA** | 9d | 2006-07-24 A | 2006-08-03 | 33 | 14% | 7d |  |
| 52 |  | Make the Select Samples a single click for PCA | 1d | 2006-07-24 | 2006-07-24 | 33 |  | 15d |  |
| 53 |  | Allow selection of groups by double click (same feature through out the application) | 1d | 2006-07-27 A | 2006-07-27 A | 52 | 100% |  |  |
| 54 |  | Allow option to remove colors and shapes on view “raw” graphs | 3d | 2006-07-28 | 2006-08-01 | 53 |  | 0d |  |
| 55 |  | Normal samples should not display survival length shapes, but be designated as Normal | 2d | 2006-08-02 | 2006-08-03 | 54 |  | 0d |  |
| 56 | 1.1.3.2.1.3 | **Webgenome** | 7d | 2006-08-04 | 2006-08-14 | 55 |  | 0d |  |
| 57 |  | API Design for providing Webgenome with LOH data | 2d | 2006-08-04 | 2006-08-07 |  |  | 0d |  |
| 58 |  | Implement API that provides Webgenome with LOH data | 1w | 2006-08-08 | 2006-08-14 | 57 |  | 0d |  |
| 59 |  | Hardware configuration & HLA for Webgenome | 2d | 2006-08-04 | 2006-08-07 |  |  | 5d |  |
| 60 |  | Deployment to Dev | 0d | 2006-08-14 | 2006-08-14 | 44 |  | 0d |  |
| 61 | 1.1.3.2.3 | **Test** | 11d | 2006-08-15 | 2006-08-29 |  |  | 0d |  |
| 62 |  | Unit Test | 4d | 2006-08-15 | 2006-08-18 | 60 |  | 7d |  |
| 63 |  | Integration Test (Dev) | 11d | 2006-08-15 | 2006-08-29 | 60 |  | 0d |  |
| 64 |  | Milestone: Test on Dev Completed | 0d | 2006-08-29 | 2006-08-29 | 61 |  | 0d |  |
| 65 | 1.1.3.2.5 | **MileStone Draft Documents:** | 0d | 2006-08-29 | 2006-08-29 | 61 |  | 0d |  |
| 66 |  | Draft Iteration 1 Test Cases Completed | 0d | 2006-08-29 | 2006-08-29 |  |  | 0d |  |
| 67 | 1.1.3.3 | **Iteration 3: (New Features)** | 29d | 2006-08-30 | 2006-10-09 | 43 |  | 0d |  |
| 68 | 1.1.3.3.1 | **Design** | 10d | 2006-08-30 | 2006-09-12 |  |  | 0d |  |
| 69 |  | ANOVA multi-group comparison to class comparison | 3d | 2006-08-30 | 2006-09-01 | 60 |  | 26d |  |
| 70 |  | CDNA Data for HLA, data processsing | 2w | 2006-08-30 | 2006-09-12 | 60 |  | 0d | finish no earlier than 2005-03-11 |

| ID | WBS | Task | Duration | Start | Finish | Predecessors | Total float | Constraint |
| --- | --- | --- | --- | --- | --- | --- | --- | --- |
| 71 |  | Incorporate KEGG metabolic pathway; search & retrieval | 5d | 2006-08-30 | 2006-09-05 |  | 24d |  |
| 72 | 1.1.3.3.2 | **Code** | 19d | 2006-08-30 | 2006-09-25 |  | 0d |  |
| 73 |  | Implementation of persistence of complex queries | 3d | 2006-08-30 | 2006-09-01 | 60 | 9d |  |
| 74 |  | persisting user lists | 4d | 2006-08-30 | 2006-09-04 | 55 | 15d |  |
| 75 | 1.1.3.3.2.3 | **Implement analysis server modules (ANOVA) for multi-group comparisons & CDNA data** | 6d | 2006-09-13 | 2006-09-20 | 70 | 0d |  |
| 76 |  | UI, DTO and middleware changes | 4d | 2006-09-13 | 2006-09-18 |  | 2d |  |
| 77 |  | R Server module implementation | 4d | 2006-09-13 | 2006-09-18 |  | 2d |  |
| 78 |  | Analysis server implementation | 6d | 2006-09-13 | 2006-09-20 |  | 0d |  |
| 79 |  | Add option to download data in BRB tool format | 10d | 2006-08-30 | 2006-09-12 | 64 | 2d |  |
| 80 |  | Implement class comparisons for disease groups | 5d | 2006-09-04 | 2006-09-08 | 73 | 9d |  |
| 81 |  | Add compound request capability for HLA in the analysis server | 3d | 2006-09-21 | 2006-09-25 | 75 | 0d |  |
| 82 |  | Implement search & retrieval of KEGG metabolic pathway data | 8d | 2006-08-30 | 2006-09-08 | 60 | 11d |  |
| 83 |  | Externalize properties and modify build scripts | 2d | 2006-09-11 | 2006-09-12 | 80 | 9d |  |
| 84 |  | Allow all queries to be filtered by Institutions | 3d | 2006-09-13 | 2006-09-15 | 79 | 2d | start no earlier than 2006-04-10 |
| 85 |  | Add Disease Groups for KM plots | 3d | 2006-09-18 | 2006-09-20 | 84 | 2d |  |
| 86 |  | Bug Fix: Mouse over on bar graph should display p-value instead of foldchange | 1d | 2006-09-21 | 2006-09-21 | 85 | 2d |  |
| 87 | 1.1.3.3.3 | **Data Refresh** | 6d | 2006-09-11 | 2006-09-18 | 82 | 15d |  |
| 88 |  | Create R binary file | 3d | 2006-09-11 | 2006-09-13 |  | 15d |  |
| 89 |  | Database refresh | 3d | 2006-09-14 | 2006-09-18 | 88 | 15d |  |
| 90 | 1.1.3.3.4 | **Test** | 10d | 2006-09-26 | 2006-10-09 |  | 0d |  |
| 91 |  | Unit Test (per function) | 4d | 2006-09-26 | 2006-09-29 | 72 | 0d |  |
| 92 |  | Integration Test (Dev Server) | 6d | 2006-10-02 | 2006-10-09 | 91 | 0d |  |
| 93 |  | Milestone: Iteration 3 complete | 0d | 2006-10-09 | 2006-10-09 | 90 | 0d |  |
| 94 | 1.1.3.5 | **MileStone Draft Documents:** | 0d | 2006-10-09 | 2006-10-09 |  | 21d |  |
| 95 |  | Draft Iteration 3 Design Doc Completed | 0d | 2006-10-09 | 2006-10-09 | 90 | 21d |  |
| 96 |  | Draft Iteration 3 Test Cases Completed | 0d | 2006-10-09 | 2006-10-09 | 90 | 21d |  |
| 97 | 1.1.3.6 | **Transition Phase** | 21d | 2006-10-10 | 2006-11-07 | 67 | 0d |  |
| 98 | 1.1.3.6.1 | **QA** | 3d | 2006-10-10 | 2006-10-12 |  | 18d |  |
| 99 |  | Finalize Testplan | 2d | 2006-10-10 | 2006-10-11 | 93 | 18d |  |
| 100 |  | Finalize Test Cases | 1d | 2006-10-12 | 2006-10-12 | 99 | 18d |  |
| 101 | 1.1.3.6.2 | **Deploy** | 21d | 2006-10-10 | 2006-11-07 |  | 0d |  |
| 102 | 1.1.3.6.2.1 | **QA Server Deployment** | 12d | 2006-10-10 | 2006-10-25 |  | 0d |  |
| 103 |  | QA Testing | 12d | 2006-10-10 | 2006-10-25 | 93 | 0d | start no earlier than 2005-06-28 |
| 104 | 1.1.3.6.2.2 | **Staging Server Deployment** | 8d | 2006-10-26 | 2006-11-06 |  | 0d |  |
| 105 |  | Staging Testing | 8d | 2006-10-26 | 2006-11-06 | 103 | 0d |  |
| 106 | 1.1.3.6.2.3 | **Production Server Deployment** | 1d | 2006-11-07 | 2006-11-07 |  | 0d |  |
| 107 |  | Production Verification | 1d | 2006-11-07 | 2006-11-07 | 105 | 0d | start no earlier than 2005-06-13 |
| 108 |  | Milestone: Release complete | 0d | 2006-11-07 | 2006-11-07 | 107 | 0d |  |
| 109 | 1.1.3.8 | **MileStone Draft Documents:** | 0d | 2006-11-07 | 2006-11-07 |  | 0d |  |
| 110 |  | Draft Design Doc Completed | 0d | 2006-11-07 | 2006-11-07 | 107 | 0d |  |
| 111 |  | Draft Test Cases Completed | 0d | 2006-11-07 | 2006-11-07 | 107 | 0d |  |
| 112 |  | Draft Test Plan Completed | 0d | 2006-11-07 | 2006-11-07 | 107 | 0d |  |
| 113 | 1.2 | **Rembrandt Post 1.5 Features** | 0d | 2006-11-07 | 2006-11-07 | 2 | 0d |  |
| 114 |  | Use the new dynamic tables for the reports so that we don’t have pagination | 0d | 2006-11-07 | 2006-11-07 |  | 0d | start no earlier than 2006-04-10 |
| 115 | 1.2.2 | **Add new caCORE GO Browser** | 0d | 2006-11-07 | 2006-11-07 | 24 | 0d |  |
| 116 |  | Add new caCORE GO Browser | 0d | 2006-11-07 | 2006-11-07 | 82 | 0d |  |
| 117 | 1.2.3 | **HOA** | 0d | 2006-11-07 | 2006-11-07 |  | 0d |  |
| 118 |  | Add PAM to HOA | 0d | 2006-11-07 | 2006-11-07 |  | 0d | start no earlier than 2006-04-10 |
| 119 |  | For every custom sample group, create an NOT group that excludes the selected samples. Need to find a good name for this feature. | 0d | 2006-11-07 | 2006-11-07 |  | 0d | start no earlier than 2006-04-10 |
| 120 |  | Implement “Cox model” to identify most significantly expressed genes associated with survival | 0d | 2006-11-07 | 2006-11-07 |  | 0d | start no earlier than 2006-04-10 |
| 121 | 1.2.4 | **PCA** | 0d | 2006-11-07 | 2006-11-07 |  | 0d |  |
| 122 |  | Look into providing the 3D PCA plot (visualize only) | 0d | 2006-11-07 | 2006-11-07 |  | 0d | start no earlier than 2006-04-10 |
| 123 |  | Allow users to color by custom groups with overlapping samples in a neutral color. (Shapes are fine as they are.) | 0d | 2006-11-07 | 2006-11-07 |  | 0d | start no earlier than 2006-04-10 |
| 124 | 1.2.5 | **Advance Queries** | 0d | 2006-11-07 | 2006-11-07 |  | 0d |  |
| 125 |  | CSV download does not work for large datasets where the number of samples is greater than 256 | 0d | 2006-11-07 | 2006-11-07 |  | 0d | start no earlier than 2006-04-10 |
| 126 | 1.2.6 | **Misc. Features** | 0d | 2006-11-07 | 2006-11-07 |  | 0d |  |
| 127 |  | Add class comparison analysis for copy number data | 0d | 2006-11-07 | 2006-11-07 |  | 0d | start no earlier than 2006-04-10 |
| 128 |  | Enhance hierarchical clustering report to allow for selection of samples/reporters from the graphic | 0d | 2006-11-07 | 2006-11-07 |  | 0d | start no earlier than 2006-04-10 |
| 129 |  | Change the way hierarchical clustering is displayed so that the image is rendered by the app and not by R | 0d | 2006-11-07 | 2006-11-07 |  | 0d | start no earlier than 2006-04-10 |
| 130 |  | Sharing queries/sample lists/etc among users | 0d | 2006-11-07 | 2006-11-07 |  | 0d | start no earlier than 2006-04-10 |
| 131 |  | Look into added functionality of sending emails to user when a query is finished for inbox. This may be out of scope until we have many more samples. | 0d | 2006-11-07 | 2006-11-07 |  | 0d | start no earlier than 2006-04-10 |

## Version 2 (saved 2006-07-24)

Note of the change: Review prior to 8/3/2006 mtg

Last finish 2006-11-07 → 2006-10-25 (-13d). Complete tasks 6 → 28.

Added:

| ID | Task | Duration | Start | Finish | Predecessors | Resources |
| --- | --- | --- | --- | --- | --- | --- |
| 65 | Draft Iteration 2 Design Doc Completed | 0d | 2006-08-29 | 2006-08-29 |  | SahniH |
| 72 | Design of the Box&Whisker and Coin plots | 5d | 2006-08-30 A | 2006-09-05 A |  | LiuH |
| 87 | Integrate new plots into Rembrandt | 2d | 2006-09-15 | 2006-09-18 | 86 | LandyR |

Removed: 62 Unit Test; 91 Unit Test (per function)

Changed:

| ID | Task | Start | Finish | Duration | Complete | Total float | Other |
| --- | --- | --- | --- | --- | --- | --- | --- |
| 1 | **Rembrandt 1.5 Release** |  | 2006-11-07 → 2006-10-25 (-13d) | 112d → 103d | 4% → 21% |  | baseline start none → 2006-06-05; baseline finish none → 2006-10-25 |
| 2 | **Rembrandt 1.5 Bug Fixes/ Feature Enchacements** |  | 2006-11-07 → 2006-10-25 (-13d) | 112d → 103d | 4% → 21% |  | baseline start none → 2006-06-05; baseline finish none → 2006-10-25 |
| 3 | **Project Management and Control** |  |  |  |  | 30d → 21d | baseline start none → 2006-06-07; baseline finish none → 2006-09-26 |
| 4 | Project Management |  |  |  |  | 30d → 21d | baseline start none → 2006-06-07; baseline finish none → 2006-09-26 |
| 5 | Project Control |  |  |  |  | 30d → 21d | baseline start none → 2006-06-07; baseline finish none → 2006-09-26 |
| 6 | **Inception Phase** |  |  |  | 3% → 99% | 88d → 79d | baseline start none → 2006-06-05; baseline finish none → 2006-07-06 |
| 7 | **Requirements Gathering** |  | 2006-06-13 A |  | 18% → 100% | 0d → none | baseline start none → 2006-06-07; baseline finish none → 2006-06-13 |
| 8 | Determine General Requirements | 2006-06-07 A | 2006-06-07 A |  | 0% → 100% | 0.9d → none | baseline start none → 2006-06-07; baseline finish none → 2006-06-07 |
| 9 | Determine Basic Use Cases | 2006-06-08 A | 2006-06-12 A |  | 0% → 100% | 0.9d → none | baseline start none → 2006-06-08; baseline finish none → 2006-06-12 |
| 10 | Prioritize Use Cases |  | 2006-06-13 A |  | 90% → 100% | 0d → none | baseline start none → 2006-06-13; baseline finish none → 2006-06-13 |
| 11 | **Documentation** |  | 2006-07-06 A |  | 0% → 100% | 88d → none | baseline start none → 2006-06-05; baseline finish none → 2006-07-06 |
| 12 | Draft Project Plan | 2006-06-05 A | 2006-06-09 A |  | 0% → 100% | 107d → none | baseline start none → 2006-06-05; baseline finish none → 2006-06-09 |
| 13 | Add Feature Requests/Bugs into TestTrack |  | 2006-06-06 → 2006-06-05 A (-1d) | 2d → 0d | 0% → 100% | 5d → none | baseline start none → 2006-06-05; baseline finish none → 2006-06-06 |
| 14 | Draft Requirements Specification Document | 2006-06-14 A | 2006-06-16 A |  | 0% → 100% | 0d → none | baseline start none → 2006-06-14; baseline finish none → 2006-06-16 |
| 15 | Draft Design Document | 2006-06-19 A | 2006-06-22 A |  | 0% → 100% | 98d → none | baseline start none → 2006-06-19; baseline finish none → 2006-06-22 |
| 16 | Draft Test Plan | 2006-06-19 A | 2006-06-22 A |  | 0% → 100% | 88d → none | baseline start none → 2006-06-19; baseline finish none → 2006-06-22 |
| 17 | Draft Test Cases | 2006-06-23 A | 2006-07-06 A |  | 0% → 100% | 88d → none | baseline start none → 2006-06-23; baseline finish none → 2006-07-06 |
| 18 | Milestone: General Requirements Captured & Priortized |  |  |  |  | 102d → 93d | baseline start none → 2006-06-16; baseline finish none → 2006-06-16 |
| 19 | **Elaboration Phase** |  | 2006-11-07 → 2006-10-25 (-13d) | 102d → 93d | 8% → 25% |  | baseline start none → 2006-06-19; baseline finish none → 2006-10-25 |
| 20 | **Itreration 1 (Bug Fixes)** |  |  |  | 33% → 99% |  | baseline start none → 2006-06-19; baseline finish none → 2006-07-21 |
| 21 | **design** | 2006-06-19 A | 2006-06-22 A |  | 0% → 100% | 2d → none | baseline start none → 2006-06-19; baseline finish none → 2006-06-22 |
| 22 | List Management | 2006-06-19 A | 2006-06-20 A |  | 0% → 100% | 2d → none | baseline start none → 2006-06-19; baseline finish none → 2006-06-20 |
| 23 | Add option to download data in BRB tool format | 2006-06-19 A | 2006-06-22 A |  | 0% → 100% | 21d → none | baseline start none → 2006-06-19; baseline finish none → 2006-06-22 |
| 24 | **Code** |  |  |  | 51% → 98% | 2d → 11d | baseline start none → 2006-06-19; baseline finish none → 2006-07-10 |
| 25 | Fix bug associated with Advance Option | 2006-06-21 A | 2006-06-23 A |  | 0% → 100% | 2d → none | baseline start none → 2006-06-21; baseline finish none → 2006-06-23 |
| 26 | Allow multiple disease selection for advanced queries |  |  |  |  | 10d → 19d | baseline start none → 2006-06-26; baseline finish none → 2006-06-28 |
| 27 | Look into save queries as they do not seem to be saving properly |  |  |  |  |  | baseline start none → 2006-06-19; baseline finish none → 2006-06-20 |
| 28 | Refactor cache to use the caIntegrator commons cache |  |  |  |  |  | baseline start none → 2006-06-21; baseline finish none → 2006-06-22 |
| 29 | Refactor Analysis server client manager |  |  |  |  |  | baseline start none → 2006-06-23; baseline finish none → 2006-06-27 |
| 30 | Investigate sample upload using JC’s file |  |  |  |  |  | baseline start none → 2006-06-19; baseline finish none → 2006-06-19 |
| 31 | Change Search Pathway to caBIO v3.1 |  |  |  |  |  | baseline start none → 2006-06-19; baseline finish none → 2006-06-23 |
| 32 | Abstracting common code UI to app. Commons module | 2006-06-26 A | 2006-06-28 A |  | 0% → 100% | 2d → none | baseline start none → 2006-06-26; baseline finish none → 2006-06-28 |
| 33 | List Management Implementation | 2006-06-29 A | 2006-07-10 A |  | 0% → 100% | 2d → none | baseline start none → 2006-06-29; baseline finish none → 2006-07-10 |
| 34 | Deployment to Dev | 2006-07-10 A | 2006-07-10 A |  | 0% → 100% | 11d → none | baseline start none → 2006-07-10; baseline finish none → 2006-07-10 |
| 35 | **Test** | 2006-07-11 A | 2006-07-20 A |  | 0% → 100% | 2d → none | baseline start none → 2006-07-11; baseline finish none → 2006-07-20 |
| 36 | Unit Test | 2006-07-11 A | 2006-07-13 A |  | 0% → 100% | 2d → none | resources none → SahniH; baseline start none → 2006-07-11; baseline finish none → 2006-07-13 |
| 37 | Integration Test (Dev) | 2006-07-14 A | 2006-07-20 A |  | 0% → 100% | 2d → none | baseline start none → 2006-07-14; baseline finish none → 2006-07-20 |
| 38 | Milestone: Test Build on Dev Completed | 2006-07-20 A | 2006-07-20 A |  | 0% → 100% | 3d → none | baseline start none → 2006-07-20; baseline finish none → 2006-07-20 |
| 39 | **MileStone Draft Documents:** | 2006-07-20 A | 2006-07-21 A |  | 0% → 100% | 2d → none | baseline start none → 2006-07-20; baseline finish none → 2006-07-21 |
| 40 | Draft Iteration 1 Design Doc Completed | 2006-07-20 A | 2006-07-20 A |  | 0% → 100% | 3d → none | baseline start none → 2006-07-20; baseline finish none → 2006-07-20 |
| 41 | Draft Iteration 1 Test Cases Completed | 2006-07-21 A | 2006-07-21 A |  | 0% → 100% | 2d → none | baseline start none → 2006-07-21; baseline finish none → 2006-07-21 |
| 42 | Draft Test Plan Completed | 2006-07-21 A | 2006-07-21 A |  | 0% → 100% | 2d → none | baseline start none → 2006-07-21; baseline finish none → 2006-07-21 |
| 43 | **Itreration 2 (Enchanced Functionality)** |  |  |  |  |  | baseline start none → 2006-07-24; baseline finish none → 2006-08-29 |
| 44 | **code** |  |  |  |  |  | baseline start none → 2006-07-24; baseline finish none → 2006-08-14 |
| 45 | **Advanced Search/Reports** |  |  |  |  |  | baseline start none → 2006-07-24; baseline finish none → 2006-08-10 |
| 46 | Allow persistence of complex queries |  |  |  |  |  | baseline start none → 2006-07-24; baseline finish none → 2006-07-28 |
| 47 | Allow users to save samples where one or more rows are highlighted. |  |  |  |  |  | baseline start none → 2006-07-24; baseline finish none → 2006-07-31 |
| 48 | “Check All” should select All items on All pages, not just the current page |  |  |  |  |  | baseline start none → 2006-08-01; baseline finish none → 2006-08-07 |
| 49 | when viewing copy number report, add button toggle that lets user see the clinical report of the data |  |  |  |  |  | baseline start none → 2006-08-08; baseline finish none → 2006-08-10 |
| 50 | Bug Fix: filter for p-value on the result page |  |  |  |  |  | baseline start none → 2006-07-24; baseline finish none → 2006-07-24 |
| 51 | **HOA** |  |  |  |  |  | baseline start none → 2006-07-24; baseline finish none → 2006-08-03 |
| 52 | Make the Select Samples a single click for PCA |  |  |  |  |  | baseline start none → 2006-07-24; baseline finish none → 2006-07-24 |
| 53 | Allow selection of groups by double click (same feature through out the application) |  |  |  |  |  | baseline start none → 2006-07-27; baseline finish none → 2006-07-27 |
| 54 | Allow option to remove colors and shapes on view “raw” graphs |  |  |  |  |  | baseline start none → 2006-07-28; baseline finish none → 2006-08-01 |
| 55 | Normal samples should not display survival length shapes, but be designated as Normal |  |  |  |  |  | baseline start none → 2006-08-02; baseline finish none → 2006-08-03 |
| 56 | **Webgenome** |  |  |  |  |  | baseline start none → 2006-08-04; baseline finish none → 2006-08-14 |
| 57 | API Design for providing Webgenome with LOH data |  |  |  |  |  | baseline start none → 2006-08-04; baseline finish none → 2006-08-07 |
| 58 | Implement API that provides Webgenome with LOH data |  |  |  |  |  | baseline start none → 2006-08-08; baseline finish none → 2006-08-14 |
| 59 | Hardware configuration & HLA for Webgenome |  |  |  |  | 5d → 4d | baseline start none → 2006-08-04; baseline finish none → 2006-08-07 |
| 60 | Deployment to Dev |  |  |  |  |  | baseline start none → 2006-08-14; baseline finish none → 2006-08-14 |
| 61 | **Test** |  |  |  |  |  | baseline start none → 2006-08-15; baseline finish none → 2006-08-29 |
| 62 | Integration Test (Dev) |  |  |  |  |  | baseline start none → 2006-08-15; baseline finish none → 2006-08-29 |
| 63 | Milestone: Test on Dev Completed |  |  |  |  |  | baseline start none → 2006-08-29; baseline finish none → 2006-08-29 |
| 64 | **MileStone Draft Documents:** |  |  |  |  |  | baseline start none → 2006-08-29; baseline finish none → 2006-08-29 |
| 66 | Draft Iteration 2 Test Cases Completed |  |  |  |  |  | was named Draft Iteration 1 Test Cases Completed; baseline start none → 2006-08-29; baseline finish none → 2006-08-29 |
| 67 | **Iteration 3: (New Features)** | 2006-08-30 A | 2006-10-09 → 2006-09-26 (-13d) | 29d → 20d | 0% → 6% |  | baseline start none → 2006-08-30; baseline finish none → 2006-09-26 |
| 68 | **Design** | 2006-08-30 A |  |  | 0% → 22% | 0d → 10d | baseline start none → 2006-08-30; baseline finish none → 2006-09-12 |
| 69 | ANOVA multi-group comparison to class comparison |  |  |  |  | 26d → 17d | baseline start none → 2006-08-30; baseline finish none → 2006-09-01 |
| 70 | CDNA Data for HLA, data processsing |  |  |  |  |  | baseline start none → 2006-08-30; baseline finish none → 2006-09-12 |
| 71 | Incorporate KEGG metabolic pathway; search & retrieval |  |  |  |  | 24d → 15d | baseline start none → 2006-08-30; baseline finish none → 2006-09-05 |

| ID | Task | Start | Finish | Duration | Total float | Predecessors | Other |
| --- | --- | --- | --- | --- | --- | --- | --- |
| 73 | **Code** |  | 2006-09-25 → 2006-09-26 (+1d) | 19d → 20d |  |  | baseline start none → 2006-08-30; baseline finish none → 2006-09-26 |
| 74 | Implementation of persistence of complex queries |  |  |  | 9d → 5d |  | baseline start none → 2006-08-30; baseline finish none → 2006-09-01 |
| 75 | persisting user lists |  |  |  | 15d → 16d |  | baseline start none → 2006-08-30; baseline finish none → 2006-09-04 |
| 76 | **Implement analysis server modules (ANOVA) for multi-group comparisons & CDNA data** |  | 2006-09-20 → 2006-09-21 (+1d) | 6d → 7d |  |  | baseline start none → 2006-09-13; baseline finish none → 2006-09-21 |
| 77 | UI, DTO and middleware changes |  | 2006-09-18 → 2006-09-21 (+3d) | 4d → 7d | 2d → 0d |  | baseline start none → 2006-09-13; baseline finish none → 2006-09-21 |
| 78 | R Server module implementation |  |  |  | 2d → 3d |  | baseline start none → 2006-09-13; baseline finish none → 2006-09-18 |
| 79 | Analysis server implementation |  |  |  | 0d → 1d |  | baseline start none → 2006-09-13; baseline finish none → 2006-09-20 |
| 80 | Add option to download data in BRB tool format | 2006-08-30 → 2006-09-04 (+5d) | 2006-09-12 → 2006-09-06 (-6d) | 10d → 3d | 2d → 5d | 63 → 74 | resources LandyR → SahniH; baseline start none → 2006-09-04; baseline finish none → 2006-09-06 |
| 81 | Implement class comparisons for disease groups |  |  |  | 9d → 10d |  | baseline start none → 2006-09-04; baseline finish none → 2006-09-08 |
| 82 | Add compound request capability for HLA in the analysis server | 2006-09-21 → 2006-09-22 (+1d) | 2006-09-25 → 2006-09-26 (+1d) |  |  |  | baseline start none → 2006-09-22; baseline finish none → 2006-09-26 |
| 83 | Implement search & retrieval of KEGG metabolic pathway data |  |  |  | 11d → 6d |  | baseline start none → 2006-08-30; baseline finish none → 2006-09-08 |
| 84 | Externalize properties and modify build scripts |  |  |  | 9d → 10d |  | baseline start none → 2006-09-11; baseline finish none → 2006-09-12 |
| 85 | Allow all queries to be filtered by Institutions | 2006-09-13 → 2006-09-07 (-6d) | 2006-09-15 → 2006-09-11 (-4d) |  | 2d → 5d |  | baseline start none → 2006-09-07; baseline finish none → 2006-09-11 |
| 86 | Add Disease Groups for KM plots | 2006-09-18 → 2006-09-12 (-6d) | 2006-09-20 → 2006-09-14 (-6d) |  | 2d → 5d |  | baseline start none → 2006-09-12; baseline finish none → 2006-09-14 |
| 88 | Bug Fix: Mouse over on bar graph should display p-value instead of foldchange | 2006-09-21 → 2006-09-19 (-2d) | 2006-09-21 → 2006-09-19 (-2d) |  | 2d → 5d | 86 → 87 | baseline start none → 2006-09-19; baseline finish none → 2006-09-19 |
| 89 | **Data Refresh** |  |  |  | 15d → 6d |  | baseline start none → 2006-09-11; baseline finish none → 2006-09-18 |
| 90 | Create R binary file |  |  |  | 15d → 6d |  | baseline start none → 2006-09-11; baseline finish none → 2006-09-13 |
| 91 | Database refresh |  |  |  | 15d → 6d |  | baseline start none → 2006-09-14; baseline finish none → 2006-09-18 |
| 92 | **Test** | 2006-09-26 → 2006-08-30 (-27d) | 2006-10-09 → 2006-09-06 (-33d) | 10d → 6d | 0d → 14d |  | baseline start none → 2006-08-30; baseline finish none → 2006-09-06 |
| 93 | Integration Test (Dev Server) | 2006-10-02 → 2006-08-30 (-33d) | 2006-10-09 → 2006-09-06 (-33d) |  | 0d → 14d | Unit Test (per function) → none | baseline start none → 2006-08-30; baseline finish none → 2006-09-06 |
| 94 | Milestone: Iteration 3 complete | 2006-10-09 → 2006-09-06 (-33d) | 2006-10-09 → 2006-09-06 (-33d) |  | 0d → 14d |  | resources none → LongY; baseline start none → 2006-09-06; baseline finish none → 2006-09-06 |
| 95 | **MileStone Draft Documents:** | 2006-10-09 → 2006-09-06 (-33d) | 2006-10-09 → 2006-09-06 (-33d) |  | 21d → 35d |  | baseline start none → 2006-09-06; baseline finish none → 2006-09-06 |
| 96 | Draft Iteration 3 Design Doc Completed | 2006-10-09 → 2006-09-06 (-33d) | 2006-10-09 → 2006-09-06 (-33d) |  | 21d → 35d |  | baseline start none → 2006-09-06; baseline finish none → 2006-09-06 |
| 97 | Draft Iteration 3 Test Cases Completed | 2006-10-09 → 2006-09-06 (-33d) | 2006-10-09 → 2006-09-06 (-33d) |  | 21d → 35d |  | baseline start none → 2006-09-06; baseline finish none → 2006-09-06 |
| 98 | **Transition Phase** | 2006-10-10 → 2006-09-27 (-13d) | 2006-11-07 → 2006-10-25 (-13d) |  |  |  | baseline start none → 2006-09-27; baseline finish none → 2006-10-25 |
| 99 | **QA** | 2006-10-10 → 2006-09-27 (-13d) | 2006-10-12 → 2006-09-29 (-13d) |  |  |  | baseline start none → 2006-09-27; baseline finish none → 2006-09-29 |
| 100 | Finalize Testplan | 2006-10-10 → 2006-09-27 (-13d) | 2006-10-11 → 2006-09-28 (-13d) |  |  |  | baseline start none → 2006-09-27; baseline finish none → 2006-09-28 |
| 101 | Finalize Test Cases | 2006-10-12 → 2006-09-29 (-13d) | 2006-10-12 → 2006-09-29 (-13d) |  |  |  | baseline start none → 2006-09-29; baseline finish none → 2006-09-29 |
| 102 | **Deploy** | 2006-10-10 → 2006-09-27 (-13d) | 2006-11-07 → 2006-10-25 (-13d) |  |  |  | baseline start none → 2006-09-27; baseline finish none → 2006-10-25 |
| 103 | **QA Server Deployment** | 2006-10-10 → 2006-09-27 (-13d) | 2006-10-25 → 2006-10-12 (-13d) |  |  |  | baseline start none → 2006-09-27; baseline finish none → 2006-10-12 |
| 104 | QA Testing | 2006-10-10 → 2006-09-27 (-13d) | 2006-10-25 → 2006-10-12 (-13d) |  |  |  | baseline start none → 2006-09-27; baseline finish none → 2006-10-12 |
| 105 | **Staging Server Deployment** | 2006-10-26 → 2006-10-13 (-13d) | 2006-11-06 → 2006-10-24 (-13d) |  |  |  | baseline start none → 2006-10-13; baseline finish none → 2006-10-24 |
| 106 | Staging Testing | 2006-10-26 → 2006-10-13 (-13d) | 2006-11-06 → 2006-10-24 (-13d) |  |  |  | baseline start none → 2006-10-13; baseline finish none → 2006-10-24 |
| 107 | **Production Server Deployment** | 2006-11-07 → 2006-10-25 (-13d) | 2006-11-07 → 2006-10-25 (-13d) |  |  |  | baseline start none → 2006-10-25; baseline finish none → 2006-10-25 |
| 108 | Production Verification | 2006-11-07 → 2006-10-25 (-13d) | 2006-11-07 → 2006-10-25 (-13d) |  |  |  | baseline start none → 2006-10-25; baseline finish none → 2006-10-25 |
| 109 | Milestone: Release complete | 2006-11-07 → 2006-10-25 (-13d) | 2006-11-07 → 2006-10-25 (-13d) |  |  |  | resources none → SahniH; baseline start none → 2006-10-25; baseline finish none → 2006-10-25 |
| 110 | **MileStone Draft Documents:** | 2006-11-07 → 2006-10-25 (-13d) | 2006-11-07 → 2006-10-25 (-13d) |  |  |  | baseline start none → 2006-10-25; baseline finish none → 2006-10-25 |
| 111 | Draft Design Doc Completed | 2006-11-07 → 2006-10-25 (-13d) | 2006-11-07 → 2006-10-25 (-13d) |  |  |  | baseline start none → 2006-10-25; baseline finish none → 2006-10-25 |
| 112 | Draft Test Cases Completed | 2006-11-07 → 2006-10-25 (-13d) | 2006-11-07 → 2006-10-25 (-13d) |  |  |  | baseline start none → 2006-10-25; baseline finish none → 2006-10-25 |
| 113 | Draft Test Plan Completed | 2006-11-07 → 2006-10-25 (-13d) | 2006-11-07 → 2006-10-25 (-13d) |  |  |  | baseline start none → 2006-10-25; baseline finish none → 2006-10-25 |
| 114 | **Rembrandt Post 1.5 Features** | 2006-11-07 → 2006-10-25 (-13d) | 2006-11-07 → 2006-10-25 (-13d) |  |  |  | baseline start none → 2006-10-25; baseline finish none → 2006-10-25 |
| 115 | Use the new dynamic tables for the reports so that we don’t have pagination | 2006-11-07 → 2006-10-25 (-13d) | 2006-11-07 → 2006-10-25 (-13d) |  |  |  | baseline start none → 2006-10-25; baseline finish none → 2006-10-25 |
| 116 | **Add new caCORE GO Browser** | 2006-11-07 → 2006-10-25 (-13d) | 2006-11-07 → 2006-10-25 (-13d) |  |  |  | baseline start none → 2006-10-25; baseline finish none → 2006-10-25 |
| 117 | Add new caCORE GO Browser | 2006-11-07 → 2006-10-25 (-13d) | 2006-11-07 → 2006-10-25 (-13d) |  |  |  | baseline start none → 2006-10-25; baseline finish none → 2006-10-25 |
| 118 | **HOA** | 2006-11-07 → 2006-10-25 (-13d) | 2006-11-07 → 2006-10-25 (-13d) |  |  |  | baseline start none → 2006-10-25; baseline finish none → 2006-10-25 |
| 119 | Add PAM to HOA | 2006-11-07 → 2006-10-25 (-13d) | 2006-11-07 → 2006-10-25 (-13d) |  |  |  | baseline start none → 2006-10-25; baseline finish none → 2006-10-25 |
| 120 | For every custom sample group, create an NOT group that excludes the selected samples. Need to find a good name for this feature. | 2006-11-07 → 2006-10-25 (-13d) | 2006-11-07 → 2006-10-25 (-13d) |  |  |  | baseline start none → 2006-10-25; baseline finish none → 2006-10-25 |
| 121 | Implement “Cox model” to identify most significantly expressed genes associated with survival | 2006-11-07 → 2006-10-25 (-13d) | 2006-11-07 → 2006-10-25 (-13d) |  |  |  | baseline start none → 2006-10-25; baseline finish none → 2006-10-25 |
| 122 | **PCA** | 2006-11-07 → 2006-10-25 (-13d) | 2006-11-07 → 2006-10-25 (-13d) |  |  |  | baseline start none → 2006-10-25; baseline finish none → 2006-10-25 |
| 123 | Look into providing the 3D PCA plot (visualize only) | 2006-11-07 → 2006-10-25 (-13d) | 2006-11-07 → 2006-10-25 (-13d) |  |  |  | baseline start none → 2006-10-25; baseline finish none → 2006-10-25 |
| 124 | Allow users to color by custom groups with overlapping samples in a neutral color. (Shapes are fine as they are.) | 2006-11-07 → 2006-10-25 (-13d) | 2006-11-07 → 2006-10-25 (-13d) |  |  |  | baseline start none → 2006-10-25; baseline finish none → 2006-10-25 |
| 125 | **Advance Queries** | 2006-11-07 → 2006-10-25 (-13d) | 2006-11-07 → 2006-10-25 (-13d) |  |  |  | baseline start none → 2006-10-25; baseline finish none → 2006-10-25 |
| 126 | CSV download does not work for large datasets where the number of samples is greater than 256 | 2006-11-07 → 2006-10-25 (-13d) | 2006-11-07 → 2006-10-25 (-13d) |  |  |  | baseline start none → 2006-10-25; baseline finish none → 2006-10-25 |
| 127 | **Misc. Features** | 2006-11-07 → 2006-10-25 (-13d) | 2006-11-07 → 2006-10-25 (-13d) |  |  |  | baseline start none → 2006-10-25; baseline finish none → 2006-10-25 |
| 128 | Add class comparison analysis for copy number data | 2006-11-07 → 2006-10-25 (-13d) | 2006-11-07 → 2006-10-25 (-13d) |  |  |  | baseline start none → 2006-10-25; baseline finish none → 2006-10-25 |
| 129 | Enhance hierarchical clustering report to allow for selection of samples/reporters from the graphic | 2006-11-07 → 2006-10-25 (-13d) | 2006-11-07 → 2006-10-25 (-13d) |  |  |  | baseline start none → 2006-10-25; baseline finish none → 2006-10-25 |
| 130 | Change the way hierarchical clustering is displayed so that the image is rendered by the app and not by R | 2006-11-07 → 2006-10-25 (-13d) | 2006-11-07 → 2006-10-25 (-13d) |  |  |  | baseline start none → 2006-10-25; baseline finish none → 2006-10-25 |
| 131 | Sharing queries/sample lists/etc among users | 2006-11-07 → 2006-10-25 (-13d) | 2006-11-07 → 2006-10-25 (-13d) |  |  |  | baseline start none → 2006-10-25; baseline finish none → 2006-10-25 |
| 132 | Look into added functionality of sending emails to user when a query is finished for inbox. This may be out of scope until we have many more samples. | 2006-11-07 → 2006-10-25 (-13d) | 2006-11-07 → 2006-10-25 (-13d) |  |  |  | baseline start none → 2006-10-25; baseline finish none → 2006-10-25 |
