# caIntegrator-DRAFT

How a schedule from MS Project changed from version to version. A marks actual dates.

## Version 1 (saved 2006-07-10)

Note of the change: initial revision

| ID | WBS | Task | Duration | Start | Finish | Predecessors | Complete | Total float | Constraint |
| --- | --- | --- | --- | --- | --- | --- | --- | --- | --- |
| 1 | 1 | **caIntegrator** | 144.57d? | 2006-03-28 A | 2006-10-16 |  | 12% | 0d |  |
| 2 | 1.1 | **Project Management and Control** | 50d | 2006-05-25 | 2006-08-02 |  |  | 52.57d |  |
| 3 |  | Project Management | 50d | 2006-05-25 | 2006-08-02 |  |  | 52.57d |  |
| 4 |  | Project Control | 50d | 2006-05-25 | 2006-08-02 |  |  | 52.57d |  |
| 5 | 1.2 | **Inception Phase** | 47d | 2006-03-28 A | 2006-05-31 |  | 17% | 97.57d |  |
| 6 | 1.2.1 | **Requirements Gathering** | 3d | 2006-03-28 A | 2006-03-30 A |  | 100% |  |  |
| 7 |  | Determine General Requirements | 0d | 2006-03-28 A | 2006-03-28 A |  | 100% |  |  |
| 8 |  | Determine Basic Use Cases | 0d | 2006-03-29 A | 2006-03-29 A | 7 | 100% |  |  |
| 9 |  | Prioritize Use Cases | 0d | 2006-03-30 A | 2006-03-30 A | 7, 8 | 100% |  |  |
| 10 |  | Milestone: General Requirements Captured | 0d | 2006-03-30 A | 2006-03-30 A | 9 | 100% |  |  |
| 11 | 1.2.2 | **Project Management** | 41d | 2006-04-05 A | 2006-05-31 |  | 17% | 97.57d |  |
| 12 |  | Draft Project Plan | 2d | 2006-04-05 A | 2006-04-06 |  | 60% | 136.57d |  |
| 13 |  | Add Feature Requests/Bugs into TestTrack | 2d | 2006-05-25 | 2006-05-26 |  |  | 97.57d |  |
| 14 |  | Draft Requirements Specification Document | 3d | 2006-05-29 | 2006-05-31 | 13 |  | 97.57d |  |
| 15 | 1.3 | **Evolution Cycle 1: Elaboration & Construction** | 144.57d? | 2006-03-28 A | 2006-10-16 |  | 16% | 0d |  |
| 16 | 1.3.1 | **Iteration 1 - Prototype** | 90d? | 2006-03-28 A | 2006-07-31 |  | 61% | 54.57d |  |
| 17 | 1.3.1.1 | **Architecture** | 42d | 2006-03-28 A | 2006-05-25 |  | 61% | 102.57d |  |
| 18 |  | Initial Draft of Architecture | 2w | 2006-03-28 A | 2006-04-10 A |  | 100% |  |  |
| 19 |  | Internal review with caIntegrator Team | 1d | 2006-03-28 A | 2006-03-28 A | 18 | 100% |  |  |
| 20 |  | Incorporate Comments/Feedback from the team review | 2d | 2006-03-29 | 2006-03-30 | 19 |  | 136.57d |  |
| 21 |  | Draft design document (caBIG template) | 1w | 2006-03-31 | 2006-04-06 | 20 |  | 136.57d |  |
| 22 |  | Milestone: Completed Design document | 0d | 2006-05-25 | 2006-05-25 |  |  | 102.57d |  |
| 23 | 1.3.1.2 | **Registeration of CDEs in caDSR - 1.0 OM** | 40d | 2006-05-09 A | 2006-07-03 |  | 79% | 74.57d |  |
| 24 |  | Establish baseline documentation and prepare submission package | 1d | 2006-05-25 A | 2006-05-25 A |  | 100% |  |  |
| 25 |  | Annotate UML model with well formed names and definitions | 9d | 2006-05-09 A | 2006-06-12 A |  | 100% |  |  |
| 26 |  | Review UML Model using SIW | 10d | 2006-05-22 A | 2006-06-02 A | 25 | 100% |  |  |
| 27 |  | Register CDEs in caDSR | 15d | 2006-06-13 A | 2006-07-03 | 26 | 50% | 74.57d |  |
| 28 | 1.3.1.3 | **API Development - caCORE SDK** | 44d | 2006-05-31 A | 2006-07-31 |  | 22% | 54.57d |  |
| 29 |  | Draft design document (caBIG template) | 23d | 2006-05-31 A | 2006-07-31 |  | 9% | 54.57d |  |
| 30 |  | Implement hibernate mappings for FISH | 2d | 2006-06-02 A | 2006-06-05 A | 29 | 100% |  |  |
| 31 |  | Develop Unit test cases | 2d | 2006-06-06 A | 2006-06-07 A | 30 | 100% |  |  |
| 32 | 1.3.1.4 | **API Development - QBC** | 13d | 2006-05-25 A | 2006-06-12 A |  | 100% |  |  |
| 33 |  | Draft design document (caBIG template) | 1w | 2006-05-31 A | 2006-06-12 A |  | 100% |  |  |
| 34 |  | Implement hibernate mappings for FISH | 1d | 2006-05-25 A | 2006-05-25 A |  | 100% |  |  |
| 35 |  | Implement QBC API for FISH | 2d | 2006-05-25 A | 2006-05-26 A |  | 100% |  |  |
| 36 |  | Implement Junit test suite and perform unit test | 1d | 2006-05-25 A | 2006-05-25 A |  | 100% |  |  |
| 37 |  | Milestone: Completed Design document | 0d | 2006-05-25 A | 2006-05-25 A |  | 100% |  |  |
| 38 | 1.3.1.5 | **Database development** | 1d | 2006-05-25 A | 2006-05-25 A |  | 100% |  |  |
| 39 |  | Incorporate FISH into caIntegrator database schema | 1d | 2006-05-25 A | 2006-05-25 A |  | 100% |  |  |
| 40 |  | Complete database schema development & data migration | 1d | 2006-05-25 A | 2006-05-25 A |  | 100% |  |  |
| 41 |  | Deploy iteration to DEV Server | 1d? | 2006-05-25 A | 2006-05-25 A |  | 100% |  |  |
| 42 | 1.3.2 | **Itreration 2a: CGEMS using caCORE-SDK** | 47d | 2006-05-25 A | 2006-07-28 |  | 6% | 9d |  |
| 43 |  | Harmonize CGEMS UML model with caIntegrator | 7d | 2006-06-12 A | 2006-06-20 |  | 90% | 0d | finish no earlier than 2006-06-20 |
| 44 |  | Harmozine CGEMS OM with CG-OM | 7d | 2006-06-12 A | 2006-06-21 | 43 | 90% | 36.3d | start no earlier than 2006-06-12 |
| 45 |  | Review Model with CGEMS stake holders | 0d | 2006-06-20 | 2006-06-20 | 43 |  | 0d |  |
| 46 |  | Incorporate FeedBack | 2d | 2006-06-21 | 2006-06-22 | 45 |  | 0d |  |
| 47 |  | MileStone: Finalize model with CGEMS stake holders | 0d | 2006-06-22 | 2006-06-22 | 46 |  | 0d |  |
| 48 |  | MileStone: Finalize CG-OM w/CGEMS model | 0d | 2006-06-22 | 2006-06-22 | 47 |  | 40d |  |
| 49 |  | MileStone: Generate API using caCORE SDK | 0d | 2006-07-14 | 2006-07-14 | 50 |  | 24d |  |
| 50 | 1.3.2.8 | **Generate API using caCORE-SDK** | 18d | 2006-06-21 | 2006-07-14 | 43 |  | 19d |  |
| 51 |  | Generate API using caCORE SDK | 2w | 2006-06-21 | 2006-07-04 |  |  | 19d |  |
| 52 | 1.3.2.8.2 | **Test** | 8d | 2006-07-05 | 2006-07-14 | 51 |  | 19d |  |
| 53 |  | Unit Test | 3d | 2006-07-05 | 2006-07-07 |  |  | 19d |  |
| 54 |  | Integration Test & Fixes (Dev) | 5d | 2006-07-10 | 2006-07-14 | 53 |  | 19d |  |
| 55 |  | Milestone: Test Fixes on Dev | 0d | 2006-07-14 | 2006-07-14 | 54 |  | 19d |  |
| 56 |  | MileStone: Dev database ready | 0d | 2006-06-29 | 2006-06-29 | 57 |  | 35d |  |
| 57 | 1.3.2.10 | **Database design and implementation** | 7d | 2006-06-21 | 2006-06-29 |  |  | 30d |  |
| 58 |  | Create Db schema | 4d | 2006-06-21 | 2006-06-26 | 43 |  | 30d |  |
| 59 |  | Populate data (GenotypeFinding & SNPAssay) | 3d | 2006-06-27 | 2006-06-29 | 58 |  | 30d |  |
| 60 |  | MileStone: Completed middle-tier implementation | 0d | 2006-07-27 | 2006-07-27 | 61 |  | 36d |  |
| 61 | 1.3.2.12 | **Middle-tier implementation** | 25d | 2006-06-23 | 2006-07-27 |  |  | 0d |  |
| 62 |  | Draft middleware design document - CGEMS | 1w | 2006-06-23 | 2006-06-29 | 47 |  | 0d |  |
| 63 |  | Implement CGEMS DTO and service middletier | 4w | 2006-06-30 | 2006-07-27 | 62 |  | 0d |  |
| 64 | 1.3.2.13 | **caBIG Compliance & caGRID** | 47d | 2006-05-25 | 2006-07-28 |  |  | 5d |  |
| 65 |  | Fully Annotate Model | 2w | 2006-06-21 | 2006-07-04 | 43 |  | 5d |  |
| 66 |  | Process Model thru SIW | 8d | 2006-07-05 | 2006-07-14 | 65 |  | 5d |  |
| 67 |  | Register Model in caDSR | 2w | 2006-07-17 | 2006-07-28 | 66 |  | 5d |  |
| 68 |  | Register CGEMS with caGRID | 1w | 2006-07-17 | 2006-07-21 | 66 |  | 6d |  |
| 69 | 1.3.2.13.5 | **Test** | 46d | 2006-05-25 | 2006-07-27 |  |  | 6d |  |
| 70 |  | Unit Test | 2d | 2006-05-25 | 2006-05-26 |  |  | 50d |  |

| ID | WBS | Task | Duration | Start | Finish | Predecessors | Total float | Constraint |
| --- | --- | --- | --- | --- | --- | --- | --- | --- |
| 71 |  | Integration Test (caGRID Dev) | 4d | 2006-07-24 | 2006-07-27 | 68 | 6d |  |
| 72 |  | Milestone: Test Fixes on Dev | 0d | 2006-07-27 | 2006-07-27 | 71 | 6d |  |
| 73 | 1.3.3 | **Iteration 2b - I-SPY Findings** | 87.57d | 2006-06-15 | 2006-10-16 |  | 0d |  |
| 74 |  | Milestone: Clinical Object Model Supports Clinical Queries | 0d | 2006-09-01 | 2006-09-01 | 75 | 14.57d |  |
| 75 | 1.3.3.2 | **CG - Model with I-SPY Finding Pkgs** | 16d | 2006-06-15 | 2006-07-06 |  | 22d |  |
| 76 |  | Design CG OM packages | 14d | 2006-06-15 | 2006-07-04 |  | 22d | start no earlier than 2006-06-15 |
| 77 |  | Review OM with the caIntegrator team | 1d | 2006-07-05 | 2006-07-05 | 76 | 22d |  |
| 78 |  | Milestone: Complete CG - OM | 0d | 2006-07-05 | 2006-07-05 | 77 | 22d |  |
| 79 |  | Refactor FISH into the CG OM package | 1d | 2006-07-06 | 2006-07-06 | 77 | 43.57d |  |
| 80 | 1.3.3.3 | **Generate API using caCORE-SDK** | 28d | 2006-07-07 | 2006-08-15 | 75 | 43.57d |  |
| 81 |  | Generate API using caCORE SDK | 4w | 2006-07-07 | 2006-08-03 |  | 43.57d |  |
| 82 | 1.3.3.3.2 | **Test** | 8d | 2006-08-04 | 2006-08-15 | 81 | 43.57d |  |
| 83 |  | Unit Test | 3d | 2006-08-04 | 2006-08-08 |  | 43.57d |  |
| 84 |  | Integration Test & Fixes (Dev) | 5d | 2006-08-09 | 2006-08-15 | 83 | 43.57d |  |
| 85 |  | Milestone: Test Fixes on Dev | 0d | 2006-08-15 | 2006-08-15 | 84 | 43.57d |  |
| 86 | 1.3.3.4 | **Database design and implementation** | 20d | 2006-07-07 | 2006-08-03 | 75, 57 | 51.57d |  |
| 87 |  | Create Db schema | 2w | 2006-07-07 | 2006-07-20 |  | 51.57d |  |
| 88 |  | Load data | 2w | 2006-07-21 | 2006-08-03 | 87 | 51.57d |  |
| 89 | 1.3.3.5 | **Middle-tier Implementation** | 56.57d | 2006-07-28 | 2006-10-16 | 63 | 0d |  |
| 90 |  | Draft design document (caBIG template) for ISPY | 1w | 2006-07-28 | 2006-08-03 |  | 0d |  |
| 91 |  | Implement Query Service Layer | 5.71w | 2006-08-04 | 2006-09-13 | 90 | 0d |  |
| 92 |  | Implement Middle Tier code to support FISH | 8d | 2006-09-13 | 2006-09-25 | 91 | 0d |  |
| 93 |  | MileStone: Middle-tier for FISH completed | 0d | 2006-09-25 | 2006-09-25 | 92 | 0d |  |
| 94 |  | Implement Middle Tier Code to support IHC | 8d | 2006-09-25 | 2006-10-05 | 92 | 2d |  |
| 95 |  | MileStone: Middle-tier for IHC completed | 0d | 2006-10-05 | 2006-10-05 | 94 | 3d |  |
| 96 |  | Implement Middle Tier Code to support P53 | 4d | 2006-10-05 | 2006-10-11 | 94 | 2d |  |
| 97 |  | MileStone: Middle-tier for P53 completed | 0d | 2006-10-11 | 2006-10-11 | 96 | 2d |  |
| 98 |  | Implement Middle Tier Code to support GE | 8d | 2006-09-25 | 2006-10-05 | 92 | 0d |  |
| 99 |  | MileStone: Middle-tier for GE completed | 0d | 2006-10-05 | 2006-10-05 | 98 | 4d |  |
| 100 |  | Implement Junit test suite and perform unit test | 1w | 2006-10-05 | 2006-10-12 | 98 | 0d |  |
| 101 |  | Milestone: Completed Design document | 2d | 2006-10-12 | 2006-10-16 | 100 | 0d |  |
| 102 | 1.3.3.6 | **caBIG compliance & caGRID** | 50d | 2006-07-31 | 2006-10-06 | 78, 64 | 5d |  |
| 103 | 1.3.3.6.1 | **Registeration of CDEs in caDSR - 2.0 OM** | 45d | 2006-07-31 | 2006-09-29 |  | 5d |  |
| 104 |  | Fully Annotate Model | 3w | 2006-07-31 | 2006-08-18 |  | 5d |  |
| 105 |  | Process Model thru SIW | 3w | 2006-08-21 | 2006-09-08 | 104 | 5.57d |  |
| 106 |  | Register Model in caDSR | 2w | 2006-09-11 | 2006-09-22 | 105 | 15.57d |  |
| 107 |  | Register CGOM 2.0 with caGRID | 2w | 2006-09-11 | 2006-09-22 | 105 | 5.57d |  |
| 108 |  | Curate additional metadata | 1w | 2006-09-25 | 2006-09-29 | 107 | 5.57d |  |
| 109 |  | Establish documentation for VCDE & Arch. Review | 1w | 2006-10-02 | 2006-10-06 | 108 | 5.57d |  |
| 110 |  | MileStone: caBIG VCDE & Arch. Review presentation | 0d | 2006-10-06 | 2006-10-06 | 109 | 5.57d |  |
| 111 | 1.3.4 | **Iteration 3** | 47d? | 2006-03-28 A | 2006-05-31 |  | 97.57d |  |
| 112 | 1.3.4.1 | **caIntegratorVista (ETL status portal)** | 43d? | 2006-03-28 A | 2006-05-25 |  | 101.57d |  |
| 113 | 1.3.4.1.1 | **Requirements Gathering** | 3d | 2006-03-28 A | 2006-03-30 |  | 141.57d |  |
| 114 |  | Determine Requirements | 1d | 2006-03-28 A | 2006-03-28 |  | 0d |  |
| 115 |  | Determine Basic Use Cases | 1d | 2006-03-29 A | 2006-03-29 | 114 | 0d |  |
| 116 |  | Prioritize Use Cases | 1d | 2006-03-30 A | 2006-03-30 | 114, 115 | 141.57d |  |
| 117 |  | Milestone: General Requirements Captured | 0d | 2006-03-30 | 2006-03-30 | 116 | 141.57d |  |
| 118 | 1.3.4.1.2 | **Implementation** | 1d? | 2006-05-25 | 2006-05-25 |  | 101.57d |  |
| 119 |  | Draft Design document for Study Gateway | 1d? | 2006-05-25 | 2006-05-25 |  | 101.57d |  |
| 120 |  | Implement Study gateway module | 1d? | 2006-05-25 | 2006-05-25 |  | 101.57d |  |
| 121 |  | Develop Unit test and perform testing | 1d? | 2006-05-25 | 2006-05-25 |  | 101.57d |  |
| 122 |  | MileStone: Complete Design Document & study gateway module | 1d? | 2006-05-25 | 2006-05-25 |  | 101.57d |  |
| 123 | 1.3.4.2 | **API Development - caCORE SDK** | 5d? | 2006-05-25 | 2006-05-31 |  | 97.57d |  |
| 124 |  | Implement hibernate mappings | 1d? | 2006-05-25 | 2006-05-25 |  | 101.57d |  |
| 125 |  | Update design document | 1w | 2006-05-25 | 2006-05-31 |  | 97.57d |  |
| 126 | 1.3.4.3 | **Middle-tier implementation** | 1d? | 2006-05-25 | 2006-05-25 |  | 101.57d |  |
| 127 |  | Implement hibernate mappings | 1d? | 2006-05-25 | 2006-05-25 |  | 101.57d |  |
| 128 |  | Implement Service layer | 1d? | 2006-05-25 | 2006-05-25 |  | 101.57d |  |
| 129 |  | Implement Junit test suite and perform unit test | 1d? | 2006-05-25 | 2006-05-25 |  | 101.57d |  |
| 130 |  | Milestone: Updated Design document | 0d | 2006-05-25 | 2006-05-25 |  | 102.57d |  |
| 131 | 1.3.4.4 | **Database development** | 1d? | 2006-05-25 | 2006-05-25 |  | 101.57d |  |
| 132 |  | Develop table creation scripts and data migration | 1d? | 2006-05-25 | 2006-05-25 |  | 101.57d |  |
| 133 |  | Complete database schema development & data migration | 1d? | 2006-05-25 | 2006-05-25 |  | 101.57d |  |
| 134 | 1.3.4.5 | **Technical guide** | 1d? | 2006-05-25 | 2006-05-25 |  | 101.57d |  |
| 135 |  | Draft technical guide | 1d? | 2006-05-25 | 2006-05-25 |  | 101.57d |  |
| 136 |  | Review technical guide with Tech. writer & caIntegrator team | 1d? | 2006-05-25 | 2006-05-25 |  | 101.57d |  |
| 137 |  | Milestone: Completed technical guide | 1d? | 2006-05-25 | 2006-05-25 |  | 101.57d |  |
| 138 |  | Deploy iteration to DEV Server | 1d? | 2006-05-25 | 2006-05-25 |  | 101.57d |  |
| 139 | 1.4 | **Transition** | 1d? | 2006-05-25 | 2006-05-25 |  | 101.57d |  |
| 140 |  | Implement API Integration test suite | 1d? | 2006-05-25 | 2006-05-25 |  | 101.57d |  |

| ID | WBS | Task | Duration | Start | Finish | Total float |
| --- | --- | --- | --- | --- | --- | --- |
| 141 |  | Test all service layer APIs | 1d? | 2006-05-25 | 2006-05-25 | 101.57d |
| 142 |  | Milestone: Completed CGOM 2.0 & Service Layer APIs | 0d | 2006-05-25 | 2006-05-25 | 102.57d |
| 143 | 1.5 | **Evolutionary Cycle 2:** | 1d? | 2006-05-25 | 2006-05-25 | 101.57d |
| 144 |  | Iteration 1 | 1d? | 2006-05-25 | 2006-05-25 | 101.57d |

## Version 2 (saved 2006-07-24)

Note of the change: Review prior to 8/3/2006 mtg

Last finish 2006-10-16 → 2006-10-24 (+8d). Complete tasks 19 → 41.

Removed: 68 Register CGEMS with caGRID; 69 Test; 70 Unit Test; 71 Integration Test (caGRID Dev); 72 Milestone: Test Fixes on Dev

Changed:

| ID | Task | Start | Finish | Duration | Complete | Total float |
| --- | --- | --- | --- | --- | --- | --- |
| 1 | **caIntegrator** |  | 2006-10-16 → 2006-10-24 (+8d) | 144.57d? → 150.57d? | 12% → 32% |  |
| 15 | **Evolution Cycle 1: Elaboration & Construction** |  | 2006-10-16 → 2006-10-24 (+8d) | 144.57d? → 150.57d? | 16% → 41% |  |
| 16 | **Iteration 1 - Prototype** |  | 2006-07-31 A | 90d? → 90d | 61% → 100% | 54.57d → none |
| 17 | **Architecture** |  | 2006-05-25 → 2006-07-21 A (+57d) | 42d → 84d | 61% → 100% | 102.57d → none |
| 20 | Incorporate Comments/Feedback from the team review | 2006-03-29 → 2006-07-13 A (+106d) | 2006-03-30 → 2006-07-17 A (+109d) |  | 0% → 100% | 136.57d → none |
| 21 | Draft design document (caBIG template) | 2006-03-31 → 2006-07-17 A (+108d) | 2006-04-06 → 2006-07-21 A (+106d) |  | 0% → 100% | 136.57d → none |
| 22 | Milestone: Completed Design document | 2006-05-25 A | 2006-05-25 A |  | 0% → 100% | 102.57d → none |
| 23 | **Registeration of CDEs in caDSR - 1.0 OM** |  | 2006-07-03 → 2006-07-14 A (+11d) | 40d → 49d | 79% → 100% | 74.57d → none |
| 27 | Register CDEs in caDSR |  | 2006-07-03 → 2006-07-14 A (+11d) |  | 50% → 100% | 74.57d → none |
| 28 | **API Development - caCORE SDK** |  | 2006-07-31 A |  | 22% → 100% | 54.57d → none |
| 29 | Draft design document (caBIG template) |  | 2006-07-31 A |  | 9% → 100% | 54.57d → none |
| 30 | Implement hibernate mappings for FISH | 2006-06-02 A → 2006-07-13 A (+41d) | 2006-06-05 A → 2006-07-17 A (+42d) |  |  |  |
| 41 | Deploy iteration to DEV Server |  |  | 1d? → 1d |  |  |
| 42 | **Itreration 2a: CGEMS using caCORE-SDK** | 2006-05-25 A → 2006-06-12 A (+18d) | 2006-07-28 → 2006-08-04 (+7d) | 47d → 40d | 6% → 62% | 9d → 56.57d |
| 43 | Harmonize CGEMS UML model with caIntegrator |  | 2006-06-20 A |  | 90% → 100% | 0d → none |
| 44 | Harmozine CGEMS OM with CG-OM |  | 2006-06-21 A |  | 90% → 100% | 36.3d → none |
| 45 | Review Model with CGEMS stake holders | 2006-06-20 A | 2006-06-20 A |  | 0% → 100% | 0d → none |
| 46 | Incorporate FeedBack | 2006-06-21 A | 2006-06-22 A |  | 0% → 100% | 0d → none |
| 47 | MileStone: Finalize model with CGEMS stake holders | 2006-06-22 A | 2006-06-22 A |  | 0% → 100% | 0d → none |
| 48 | MileStone: Finalize CG-OM w/CGEMS model | 2006-06-22 A | 2006-06-22 A |  | 0% → 100% | 40d → none |
| 49 | MileStone: Generate API using caCORE SDK | 2006-07-14 → 2006-07-26 A (+12d) | 2006-07-14 → 2006-07-26 A (+12d) |  | 0% → 100% | 24d → none |
| 50 | **Generate API using caCORE-SDK** | 2006-06-21 → 2006-07-03 A (+12d) | 2006-07-14 → 2006-07-26 (+12d) |  | 0% → 66% | 19d → 63.57d |
| 51 | Generate API using caCORE SDK | 2006-06-21 → 2006-07-03 A (+12d) | 2006-07-04 → 2006-07-17 A (+13d) |  | 0% → 100% | 19d → none |
| 52 | **Test** | 2006-07-05 → 2006-07-17 A (+12d) | 2006-07-14 → 2006-07-26 (+12d) |  | 0% → 23% | 19d → 63.57d |
| 53 | Unit Test | 2006-07-05 → 2006-07-17 A (+12d) | 2006-07-07 → 2006-07-19 (+12d) |  | 0% → 60% | 19d → 63.57d |
| 54 | Integration Test & Fixes (Dev) | 2006-07-10 → 2006-07-20 (+10d) | 2006-07-14 → 2006-07-26 (+12d) |  |  | 19d → 63.57d |
| 55 | Milestone: Test Fixes on Dev | 2006-07-14 → 2006-07-26 (+12d) | 2006-07-14 → 2006-07-26 (+12d) |  |  | 19d → 63.57d |
| 56 | MileStone: Dev database ready | 2006-06-29 → 2006-07-19 (+20d) | 2006-06-29 → 2006-07-19 (+20d) |  |  | 35d → 11d |
| 57 | **Database design and implementation** | 2006-06-21 → 2006-07-11 A (+20d) | 2006-06-29 → 2006-07-19 A (+20d) |  | 0% → 100% | 30d → none |
| 58 | Create Db schema | 2006-06-21 → 2006-07-11 A (+20d) | 2006-06-26 → 2006-07-17 A (+21d) |  | 0% → 100% | 30d → none |
| 59 | Populate data (GenotypeFinding & SNPAssay) | 2006-06-27 → 2006-07-17 A (+20d) | 2006-06-29 → 2006-07-19 A (+20d) |  | 0% → 100% | 30d → none |
| 60 | MileStone: Completed middle-tier implementation | 2006-07-27 → 2006-08-04 (+8d) | 2006-07-27 → 2006-08-04 (+8d) |  |  | 36d → 30d |
| 61 | **Middle-tier implementation** | 2006-06-23 → 2006-07-10 A (+17d) | 2006-07-27 → 2006-08-04 (+8d) | 25d → 20d | 0% → 25% |  |
| 62 | Draft middleware design document - CGEMS | 2006-06-23 → 2006-07-10 A (+17d) | 2006-06-29 → 2006-07-17 A (+18d) |  | 0% → 100% | 0d → none |
| 63 | Implement CGEMS DTO and service middletier | 2006-06-30 → 2006-07-17 (+17d) | 2006-07-27 → 2006-08-04 (+8d) | 4w → 3w |  |  |
| 64 | **caBIG Compliance & caGRID** | 2006-05-25 → 2006-06-21 A (+27d) |  | 47d → 28d | 0% → 64% | 5d → 6.57d |
| 65 | Fully Annotate Model | 2006-06-21 A | 2006-07-04 A |  | 0% → 100% | 5d → none |
| 66 | Process Model thru SIW | 2006-07-05 A | 2006-07-14 A |  | 0% → 100% | 5d → none |
| 68 | **Iteration 2b - I-SPY Findings** | 2006-06-15 → 2006-06-27 A (+12d) | 2006-10-16 → 2006-10-24 (+8d) | 87.57d → 85.57d | 0% → 8% |  |
| 69 | Milestone: Clinical Object Model Supports Clinical Queries | 2006-09-01 → 2006-09-14 (+13d) | 2006-09-01 → 2006-09-14 (+13d) |  |  | 14.57d → 4d |
| 70 | **CG - Model with I-SPY Finding Pkgs** | 2006-06-15 → 2006-06-27 A (+12d) | 2006-07-06 → 2006-07-18 A (+12d) |  | 0% → 100% | 22d → none |
| 71 | Design CG OM packages | 2006-06-15 → 2006-06-27 A (+12d) | 2006-07-04 → 2006-07-17 A (+13d) |  | 0% → 100% | 22d → none |
| 72 | Review OM with the caIntegrator team | 2006-07-05 → 2006-07-17 A (+12d) | 2006-07-05 → 2006-07-17 A (+12d) |  | 0% → 100% | 22d → none |
| 73 | Milestone: Complete CG - OM | 2006-07-05 → 2006-07-17 A (+12d) | 2006-07-05 → 2006-07-17 A (+12d) |  | 0% → 100% | 22d → none |
| 74 | Refactor FISH into the CG OM package | 2006-07-06 → 2006-07-18 A (+12d) | 2006-07-06 → 2006-07-18 A (+12d) |  | 0% → 100% | 43.57d → none |
| 75 | **Generate API using caCORE-SDK** | 2006-07-07 → 2006-07-19 (+12d) | 2006-08-15 → 2006-08-25 (+10d) |  |  | 43.57d → 41.57d |
| 76 | Generate API using caCORE SDK | 2006-07-07 → 2006-07-19 (+12d) | 2006-08-03 → 2006-08-15 (+12d) |  |  | 43.57d → 41.57d |
| 77 | **Test** | 2006-08-04 → 2006-08-16 (+12d) | 2006-08-15 → 2006-08-25 (+10d) |  |  | 43.57d → 41.57d |
| 78 | Unit Test | 2006-08-04 → 2006-08-16 (+12d) | 2006-08-08 → 2006-08-18 (+10d) |  |  | 43.57d → 41.57d |
| 79 | Integration Test & Fixes (Dev) | 2006-08-09 → 2006-08-21 (+12d) | 2006-08-15 → 2006-08-25 (+10d) |  |  | 43.57d → 41.57d |
| 80 | Milestone: Test Fixes on Dev | 2006-08-15 → 2006-08-25 (+10d) | 2006-08-15 → 2006-08-25 (+10d) |  |  | 43.57d → 41.57d |
| 81 | **Database design and implementation** | 2006-07-07 → 2006-07-20 (+13d) | 2006-08-03 → 2006-08-16 (+13d) |  |  | 51.57d → 48.57d |
| 82 | Create Db schema | 2006-07-07 → 2006-07-20 (+13d) | 2006-07-20 → 2006-08-02 (+13d) |  |  | 51.57d → 48.57d |
| 83 | Load data | 2006-07-21 → 2006-08-03 (+13d) | 2006-08-03 → 2006-08-16 (+13d) |  |  | 51.57d → 48.57d |
| 84 | **Middle-tier Implementation** | 2006-07-28 → 2006-08-07 (+10d) | 2006-10-16 → 2006-10-24 (+8d) |  |  |  |
| 85 | Draft design document (caBIG template) for ISPY | 2006-07-28 → 2006-08-07 (+10d) | 2006-08-03 → 2006-08-11 (+8d) |  |  |  |
| 86 | Implement Query Service Layer | 2006-08-04 → 2006-08-14 (+10d) | 2006-09-13 → 2006-09-21 (+8d) |  |  |  |
| 87 | Implement Middle Tier code to support FISH | 2006-09-13 → 2006-09-21 (+8d) | 2006-09-25 → 2006-10-03 (+8d) |  |  |  |
| 88 | MileStone: Middle-tier for FISH completed | 2006-09-25 → 2006-10-03 (+8d) | 2006-09-25 → 2006-10-03 (+8d) |  |  | 0d → 1d |
| 89 | Implement Middle Tier Code to support IHC | 2006-09-25 → 2006-10-03 (+8d) | 2006-10-05 → 2006-10-13 (+8d) |  |  | 2d → 1.18d |
| 90 | MileStone: Middle-tier for IHC completed | 2006-10-05 → 2006-10-13 (+8d) | 2006-10-05 → 2006-10-13 (+8d) |  |  | 3d → 4.18d |
| 91 | Implement Middle Tier Code to support P53 | 2006-10-05 → 2006-10-13 (+8d) | 2006-10-11 → 2006-10-19 (+8d) |  |  | 2d → 1.18d |
| 92 | MileStone: Middle-tier for P53 completed | 2006-10-11 → 2006-10-19 (+8d) | 2006-10-11 → 2006-10-19 (+8d) |  |  | 2d → 1d |
| 93 | Implement Middle Tier Code to support GE | 2006-09-25 → 2006-10-03 (+8d) | 2006-10-05 → 2006-10-13 (+8d) |  |  |  |
| 94 | MileStone: Middle-tier for GE completed | 2006-10-05 → 2006-10-13 (+8d) | 2006-10-05 → 2006-10-13 (+8d) |  |  | 4d → 5.18d |
| 95 | Implement Junit test suite and perform unit test | 2006-10-05 → 2006-10-13 (+8d) | 2006-10-12 → 2006-10-20 (+8d) |  |  |  |
| 96 | Milestone: Completed Design document | 2006-10-12 → 2006-10-20 (+8d) | 2006-10-16 → 2006-10-24 (+8d) |  |  |  |
